# LaravelConversionGanttChart1

Schedule from MS Project, 2018-05-28 to 2018-11-12.
IBBR

## Calendars

- Standard: Mon-Fri 08:00-12:00, 13:00-17:00; Sat-Sun off. Exceptions (off unless hours are given): 2018-07-04 (Independence Day), 2018-09-04 (Labor Day).

## Resources

| Resource | Group |
| --- | --- |
| Abby |  |
| Christian |  |
| Intern1 | Interns |
| Full Time |  |
| Intern2 | Interns |
| Intern3 | Interns |

## Schedule

| ID | WBS | Task | Duration | Start | Finish | Predecessors | Total slack | Free slack | Constraint | Resources | Work |
| --- | --- | --- | --- | --- | --- | --- | --- | --- | --- | --- | --- |
| 1 | 1 | **Create Models** | 104h | 2018-05-28 08:00 | 2018-06-13 17:00 |  |  |  |  |  | 96.93h |
| 2 | 1.1 | Duties Model | 1.75h | 2018-05-29 09:00 | 2018-05-29 13:35 |  | 2722.93d | 2724.34d |  | Intern2; Intern1 [80%] | 1.5h |
| 3 | 1.2 | Line Items Model | 2.25h | 2018-05-28 08:00 | 2018-05-28 10:15 |  | 112.54d | 5.72d |  | Christian [20%] | 0.45h |
| 4 | 1.3 | Teacher Info | 1.5h | 2018-05-28 08:00 | 2018-05-28 09:30 |  | 113.94d |  |  | Intern3 | 1.5h |
| 5 | 1.4 | Travel Expense Line Item | 1h | 2018-05-28 10:00 | 2018-05-28 11:00 |  | 112.62d | 52.62d | start no earlier than 2018-05-28 10:00 | Christian [20%] | 0.2h |
| 6 | 1.5 | Travel Individual Expense | 0.8h | 2018-06-01 13:00 | 2018-06-01 13:48 | 8 | 109.03d | 48.4d |  | Intern3 | 0.8h |
| 7 | 1.6 | Travel Segment | 3h | 2018-05-28 10:00 | 2018-05-28 14:00 |  | 112.38d | 52.38d | start no earlier than 2018-05-28 10:00 | Intern1 [80%] | 2.4h |
| 8 | 1.7 | Travel Request | 1h | 2018-06-01 11:00 | 2018-06-01 12:00 | 29 | 109.03d | 0d |  | Intern2 | 1h |
| 9 | 1.8 | Travel Mileage | 2h | 2018-05-28 08:00 | 2018-05-28 10:00 |  | 2723.75d | 52.75d |  | Abby | 2h |
| 10 | 1.9 | Affiliation (Tax.) | 1h | 2018-05-28 10:00 | 2018-05-28 11:00 |  | 113.75d |  | start no earlier than 2018-05-28 10:00 | Intern3 | 1h |
| 11 | 1.10 | Contacts (Tax.) | 3.33h | 2018-05-29 08:00 | 2018-05-29 11:20 |  | 112.08d |  | start no earlier than 2018-05-29 08:00 | Intern1 [80%] | 2.67h |
| 12 | 1.11 | Department (Tax.) | 1.5h | 2018-05-30 08:00 | 2018-05-30 09:30 |  | 110.31d | 44.81d | start no earlier than 2018-05-30 08:00 | Christian [20%] | 0.3h |
| 13 | 1.12 | Employment (Tax.) | 1h | 2018-05-29 08:00 | 2018-05-29 09:00 |  | 113d |  | start no earlier than 2018-05-29 08:00 | Intern2 | 1h |
| 14 | 1.13 | Equipment (Tax.) | 1h | 2018-05-29 08:00 | 2018-05-29 09:00 |  | 112.62d | 68.88d | start no earlier than 2018-05-29 08:00 | Intern3 | 1h |
| 15 | 1.14 | Event Types (Tax.) | 3.33h | 2018-05-29 08:00 | 2018-05-29 11:20 |  | 2723.08d |  | start no earlier than 2018-05-29 08:00 | Abby | 3.33h |
| 16 | 1.15 | Parking Codes (Tax.) | 1h | 2018-05-29 16:35 | 2018-05-30 09:35 |  | 2722.3d | 2723.38d | start no earlier than 2018-05-29 08:00 | Intern1 [80%] | 0.8h |
| 17 | 1.16 | Purchase Type (Tax.) | 3h | 2018-05-29 10:00 | 2018-05-29 14:00 |  | 112.5d |  | start no earlier than 2018-05-29 10:00 | Intern2 | 3h |
| 18 | 1.17 | Research Themes (Tax.) | 1h | 2018-05-30 08:00 | 2018-05-30 09:00 |  | 112d |  | start no earlier than 2018-05-30 08:00 | Intern3 | 1h |
| 19 | 1.18 | Line Item Type (Tax.) | 1.5h | 2018-05-30 09:00 | 2018-05-30 10:30 |  | 111.19d |  | start no earlier than 2018-05-30 09:00 | Christian [20%] | 0.3h |
| 20 | 1.19 | Tags/Page Type (Tax.) | 1h | 2018-05-30 08:00 | 2018-05-30 09:00 |  | 111.38d |  | start no earlier than 2018-05-30 08:00 | Intern1 [80%] | 0.8h |
| 21 | 1.20 | Task Status (Tax.) | 1h | 2018-05-29 09:00 | 2018-05-29 10:00 |  | 112.88d |  | start no earlier than 2018-05-29 09:00 | Intern3 | 1h |
| 22 | 1.21 | Travel Expense Items (Tax.) | 1h | 2018-05-30 08:00 | 2018-05-30 09:00 |  | 112d |  | start no earlier than 2018-05-30 08:00 | Intern2 | 1h |
| 23 | 1.22 | Personnel | 2h | 2018-05-31 08:00 | 2018-05-31 10:00 |  | 109.12d | 0.75d | start no earlier than 2018-05-31 08:00 | Intern2; Intern1 [80%] | 3.6h |
| 24 | 1.23 | Account | 1h | 2018-06-05 09:00 | 2018-06-05 10:00 | 23, 47 | 106.38d | 0d | start no earlier than 2018-05-31 08:00 | Intern3 | 1h |
| 25 | 1.24 | Event/Room Res. | 1.5h | 2018-06-01 10:00 | 2018-06-01 11:30 | 35 | 108.19d | 1.81d | start no earlier than 2018-05-31 08:00 | Intern1 [80%] | 1.2h |
| 26 | 1.25 | Files | 3h | 2018-06-01 08:00 | 2018-06-01 11:00 |  | 109.12d |  | start no earlier than 2018-06-01 08:00 | Christian [20%] | 0.6h |
| 27 | 1.26 | Announcements | 2h | 2018-05-31 08:00 | 2018-05-31 10:00 |  | 110.88d |  | start no earlier than 2018-05-31 08:00 | Intern3 | 2h |
| 28 | 1.27 | Chemicals | 3h | 2018-06-04 08:00 | 2018-06-04 13:30 | 23 | 108.19d | 60.81d | start no earlier than 2018-06-04 08:00 | Intern1 [80%]; Intern2 | 2.7h |
| 29 | 1.28 | Contacts Indiv. | 1h | 2018-06-01 10:00 | 2018-06-01 11:00 |  | 108d | 0d | finish no earlier than 2018-06-01 11:00 | Intern3 | 1h |
| 30 | 1.29 | Contacts Instit. | 2h | 2018-06-01 11:00 | 2018-06-01 14:00 | 29 | 2719.38d | 0d | start no earlier than 2018-05-31 10:00 | Abby | 2h |
| 31 | 1.30 | Discussion | 2h | 2018-05-31 13:30 | 2018-05-31 15:30 |  | 110.31d |  | start no earlier than 2018-05-31 13:30 | Intern3 | 2h |
| 32 | 1.31 | Equipment | 3h | 2018-06-01 08:00 | 2018-06-01 11:00 |  | 109.38d | 65.62d | finish no earlier than 2018-06-01 11:00 | Intern2 | 3h |
| 33 | 1.32 | Fac PM Schedule | 2h | 2018-06-01 13:00 | 2018-06-01 15:00 |  | 108.75d |  | start no earlier than 2018-06-01 13:00 | Full Time | 2h |
| 34 | 1.33 | Fac Tickets | 1.5h | 2018-06-01 08:00 | 2018-06-01 09:30 | 23 | 109.31d |  | start no earlier than 2018-06-01 08:00 | Intern1 [80%] | 1.2h |
| 35 | 1.34 | Groups | 2h | 2018-06-01 08:00 | 2018-06-01 10:00 |  | 107.62d | 0d | finish no earlier than 2018-06-01 10:00 | Intern3 | 2h |
| 36 | 1.35 | IT Tickets | 1.5h | 2018-06-01 08:00 | 2018-06-01 09:30 | 23 | 108.94d | 58.19d | start no earlier than 2018-06-01 08:00 | Full Time | 1.5h |
| 37 | 1.36 | Internship | 1.88h | 2018-06-01 08:00 | 2018-06-01 09:52 |  | 2720.27d |  | start no earlier than 2018-06-01 08:00 | Abby | 1.88h |
| 38 | 1.37 | Job Posting | 1.88h | 2018-06-04 09:30 | 2018-06-04 11:23 | 23 | 108.33d | 64.76d | finish no earlier than 2018-06-04 09:53 | Intern1 [80%] | 1.51h |
| 39 | 1.38 | Oligo Request | 3h | 2018-06-04 08:00 | 2018-06-04 11:00 |  | 107.75d | 53.62d | start no earlier than 2018-06-04 08:00 | Intern2 | 3h |
| 40 | 1.39 | Outbound Invoice | 3h | 2018-06-05 10:00 | 2018-06-05 14:00 | 25, 24, 29 | 106.38d | 61.38d | start no earlier than 2018-06-04 08:00 | Christian [20%] | 0.6h |
| 41 | 1.40 | P-Card Transaction | 2h | 2018-06-05 10:24 | 2018-06-05 13:24 | 46, 24 | 106.95d |  | start no earlier than 2018-06-04 08:00 | Intern1 [80%] | 1.6h |
| 42 | 1.41 | Pages | 1.5h | 2018-06-04 13:30 | 2018-06-04 15:00 |  | 2718.75d | 2719.31d | start no earlier than 2018-06-04 08:00 | Intern2 | 1.5h |
| 43 | 1.42 | Parking Code Req. | 2h | 2018-06-04 08:00 | 2018-06-04 10:00 |  | 107.88d | 55.75d | start no earlier than 2018-06-04 08:00 | Intern3 | 2h |
| 44 | 1.43 | Peptide Request | 1.88h | 2018-06-04 11:23 | 2018-06-04 14:15 |  | 108.09d | 55.52d | start no earlier than 2018-06-04 10:00 | Intern1 [80%] | 1.5h |
| 45 | 1.44 | Publication | 1.5h | 2018-06-04 10:00 | 2018-06-04 11:30 |  | 2719.06d | 2719.31d | start no earlier than 2018-06-04 08:00 | Intern3 | 1.5h |
| 46 | 1.45 | Purchase Req | 2.4h | 2018-06-05 08:00 | 2018-06-05 10:24 | 3, 23 | 107.45d | 0d | start no earlier than 2018-06-05 08:00 | Intern2 | 2.4h |
| 47 | 1.46 | Seed Grant Proposal | 1h | 2018-06-05 08:00 | 2018-06-05 09:00 | 23, 29 | 106.38d | 0d | start no earlier than 2018-06-05 08:00 | Intern3 | 1h |
| 48 | 1.47 | Service Contract | 1h | 2018-06-01 14:00 | 2018-06-01 15:00 | 30 | 108.75d |  |  | Intern1 [80%] | 0.8h |
| 49 | 1.48 | Roles | 3h | 2018-06-06 08:00 | 2018-06-06 11:00 |  | 106.12d |  | start no earlier than 2018-06-06 08:00 | Christian [30%]; Full Time | 3.9h |
| 50 | 1.49 | Permissions | 4h | 2018-06-08 08:00 | 2018-06-08 12:00 |  | 104d |  | start no earlier than 2018-06-08 08:00 | Full Time | 4h |
| 51 | 1.50 | Dashboard Menu | 5h | 2018-06-11 08:00 | 2018-06-11 14:00 |  | 2713.88d |  | start no earlier than 2018-06-11 08:00 | Abby; Christian [30%] | 6.5h |
| 52 | 1.51 | Group Menu | 3h | 2018-06-13 08:00 | 2018-06-13 11:00 |  | 2712.12d |  | start no earlier than 2018-06-13 08:00 | Abby; Christian [30%] | 3.9h |
| 53 | 1.52 | Public Menu | 8h | 2018-06-05 08:00 | 2018-06-05 17:00 |  | 2717.5d | 2717.88d | start no earlier than 2018-06-05 08:00 | Abby; Christian [30%] | 6.5h |

| ID | WBS | Task | Duration | Start | Finish | Predecessors | Total slack | Free slack | Constraint | Resources | Work |
| --- | --- | --- | --- | --- | --- | --- | --- | --- | --- | --- | --- |
| 54 | 2 | **Create Routes and Views** | 62.75d? | 2018-05-28 08:00 | 2018-08-23 15:00 |  | 0d |  |  |  | 758.54h |
| 55 | 2.1 | Public Theme Blade Template | 1.38d | 2018-05-28 08:00 | 2018-05-29 16:35 |  | 2722.55d | 2723.5d |  | Intern1 [80%]; Intern2 | 14.4h |
| 56 | 2.2 | Front Page | 3d | 2018-05-28 10:00 | 2018-05-31 14:20 |  | 2720.83d | 2721.5d |  | Abby | 24h |
| 57 | 2.3 | DashBoard | 3d | 2018-06-15 08:00 | 2018-06-19 17:00 |  | 2707.5d |  | start no earlier than 2018-06-15 08:00 | Abby | 24h |
| 58 | 2.4 | Search View | 3h | 2018-06-11 08:00 | 2018-06-11 11:00 |  | 103.75d |  | start no earlier than 2018-06-11 08:00 | Intern3; Intern2 | 6h |
| 59 | 2.5 | My Forms | 1d | 2018-06-12 08:00 | 2018-06-12 17:00 |  | 101.5d |  | start no earlier than 2018-06-12 08:00 | Intern1 [80%] | 6.4h |
| 60 | 2.6 | PI Approvals (Shipping/PR/Travel, Jobs) | 4h | 2018-05-28 08:00 | 2018-05-28 12:00 |  | 113d |  |  | Full Time | 4h |
| 61 | 2.7 | Upcoming Events view | 5h | 2018-06-13 08:00 | 2018-06-13 14:00 |  | 101.5d |  | start no earlier than 2018-06-13 08:00 | Intern1 [80%]; Intern2 | 9h |
| 62 | 2.8 | Spotlight View | 6h | 2018-06-07 08:00 | 2018-06-07 15:00 |  | 104.75d |  | start no earlier than 2018-06-07 08:00 | Christian [20%] | 1.2h |
| 63 | 2.9 | Sytem Logging | 1.8d | 2018-07-17 08:00 | 2018-07-18 15:24 |  | 76.7d |  | start no earlier than 2018-07-17 08:00 | Christian [20%] | 2.88h |
| 64 | 2.10 | User Select | 4h | 2018-06-12 08:00 | 2018-06-12 12:00 |  | 102.62d |  | start no earlier than 2018-06-12 08:00 | Intern2 | 4h |
| 66 | 2.11 | **Personnel** | 46.25d | 2018-06-11 08:00 | 2018-08-15 10:00 |  | 56.62d | 0d |  |  | 69h |
| 67 | 2.11.1 | Personnel Form | 5h | 2018-06-11 08:00 | 2018-06-11 14:00 |  | 100.75d | 7.38d | start no earlier than 2018-06-11 08:00 | Intern1 [80%] | 4h |
| 68 | 2.11.2 | Person Preview | 4h | 2018-06-13 08:00 | 2018-06-13 12:00 |  | 99.88d |  | start no earlier than 2018-06-13 08:00 | Intern3 | 4h |
| 69 | 2.11.3 | Safety Training | 4h | 2018-07-05 16:00 | 2018-07-06 11:00 | 112 | 84d |  | start no earlier than 2018-06-14 08:00 | Intern3 | 4h |
| 70 | 2.11.4 | Personnel Duplicates | 4h | 2018-06-14 08:00 | 2018-06-14 12:00 |  | 98.88d |  | start no earlier than 2018-06-14 08:00 | Intern2 | 4h |
| 71 | 2.11.5 | Directory by Group | 4h | 2018-07-16 15:00 | 2018-07-17 10:00 | 141, 35 | 77.12d |  | start no earlier than 2018-06-14 15:20 | Intern1 [80%] | 3.2h |
| 72 | 2.11.6 | Directory by Department | 4h | 2018-07-16 15:00 | 2018-07-17 10:00 | 141, 35 | 77.12d |  | start no earlier than 2018-06-20 08:00 | Intern3 | 4h |
| 73 | 2.11.7 | Personnel Expiration Reports (HR ONLY) | 4h | 2018-07-05 16:00 | 2018-07-06 11:00 | 112 | 84d |  | start no earlier than 2018-06-20 08:00 | Intern2 | 4h |
| 74 | 2.11.8 | HR Personnel Search | 4h | 2018-06-21 08:00 | 2018-06-21 12:00 |  | 93.88d |  | start no earlier than 2018-06-21 08:00 | Full Time | 4h |
| 75 | 2.11.9 | Public Directory | 4h | 2018-06-21 08:00 | 2018-06-21 12:00 | 67 | 93.38d | 1.5d | start no earlier than 2018-06-21 08:00 | Abby | 4h |
| 76 | 2.11.10 | Intranet Directory | 4h | 2018-06-21 08:00 | 2018-06-21 12:00 |  | 93.88d |  | start no earlier than 2018-06-21 08:00 | Intern3 | 4h |
| 77 | 2.11.11 | IT-E911 Report | 6h | 2018-06-21 08:00 | 2018-06-21 15:00 |  | 93.62d |  | start no earlier than 2018-06-21 08:00 | Christian [20%] | 1.2h |
| 78 | 2.11.12 | IBBR Fellows | 4h | 2018-06-22 08:00 | 2018-06-22 12:00 |  | 92.88d |  | start no earlier than 2018-06-22 08:00 | Full Time | 4h |
| 79 | 2.11.13 | Principal Investigators | 4h | 2018-06-22 08:00 | 2018-06-22 12:00 |  | 92.88d |  | start no earlier than 2018-06-22 08:00 | Christian [30%]; Intern1 [80%] | 4.4h |
| 80 | 2.11.14 | Public Directory | 4h | 2018-06-22 08:00 | 2018-06-22 12:00 |  | 92.88d |  | start no earlier than 2018-06-22 08:00 | Abby | 4h |
| 81 | 2.11.15 | Keygene Access List | 2h | 2018-06-22 08:00 | 2018-06-22 10:00 |  | 93.12d |  | start no earlier than 2018-06-22 08:00 | Intern2 | 2h |
| 82 | 2.11.16 | Purchasing - Personnel Selection | 3h | 2018-06-22 10:00 | 2018-06-22 14:00 |  | 92.75d |  | start no earlier than 2018-06-22 10:00 | Intern3 | 3h |
| 83 | 2.11.17 | Quota Report | 4h | 2018-06-25 08:00 | 2018-06-25 12:00 |  | 91.88d |  | start no earlier than 2018-06-25 08:00 | Intern1 [80%] | 3.2h |
| 84 | 2.11.18 | IT Support Staff | 4h | 2018-06-25 08:00 | 2018-06-25 12:00 | 75 | 91.88d |  | start no earlier than 2018-06-25 08:00 | Intern3 | 4h |
| 85 | 2.11.19 | Facilities Employees | 4h | 2018-08-14 15:00 | 2018-08-15 10:00 | 244 | 56.12d |  | start no earlier than 2018-06-25 08:00 | Intern2 | 4h |

| ID | WBS | Task | Duration | Start | Finish | Predecessors | Total slack | Free slack | Constraint | Resources | Work |
| --- | --- | --- | --- | --- | --- | --- | --- | --- | --- | --- | --- |
| 86 | 2.12 | **Account** | 1.25d | 2018-08-15 10:00 | 2018-08-16 12:00 | 66 | 57.81d | 0d |  |  | 23h |
| 87 | 2.12.1 | Account Form | 5h | 2018-08-15 10:00 | 2018-08-15 16:00 |  | 56.12d |  | start no earlier than 2018-06-26 08:00 | Intern2 | 5h |
| 88 | 2.12.2 | Account use approval (PR/Travel/Shipping) | 5h | 2018-08-15 10:00 | 2018-08-15 16:00 |  | 56.12d |  | start no earlier than 2018-06-26 08:00 | Intern3 | 5h |
| 89 | 2.12.3 | Account Management | 5h | 2018-08-15 16:00 | 2018-08-16 12:00 |  | 55.5d | 56.12d | start no earlier than 2018-06-26 08:00 | Intern3 | 5h |
| 90 | 2.12.4 | Select | 4h | 2018-08-15 10:00 | 2018-08-15 15:00 |  | 56.25d |  | start no earlier than 2018-06-27 08:00 | Full Time | 4h |
| 91 | 2.12.5 | By Group | 4h | 2018-08-15 16:00 | 2018-08-16 11:00 | 141, 35 | 55.62d | 56.25d | start no earlier than 2018-06-27 08:00 | Intern2 | 4h |
| 92 | 2.13 | **Event** | 1.62d | 2018-06-27 08:00 | 2018-06-28 14:00 |  | 93.12d | 25.38d |  |  | 9h |
| 93 | 2.13.1 | Event Form | 4h | 2018-06-27 08:00 | 2018-06-27 12:00 |  | 2700.25d | 2701.12d | start no earlier than 2018-06-27 08:00 | Intern2 | 4h |
| 94 | 2.13.2 | Event Management | 5h | 2018-06-28 08:00 | 2018-06-28 14:00 |  | 2699.12d | 2700d | start no earlier than 2018-06-28 08:00 | Intern3 | 5h |
| 95 | 2.14 | **Announcements** | 1.12d | 2018-06-28 08:00 | 2018-06-29 09:00 |  | 94.38d |  |  |  | 11.2h |
| 96 | 2.14.1 | Announcements Form | 4h | 2018-06-28 08:00 | 2018-06-28 12:00 |  | 90d |  | start no earlier than 2018-06-28 08:00 | Intern1 [80%] | 3.2h |
| 97 | 2.14.2 | Announcements List | 8h | 2018-06-28 08:00 | 2018-06-29 09:00 |  | 2700.38d | 2701d | start no earlier than 2018-06-28 08:00 | Intern2; Intern3 | 8h |
| 98 | 2.15 | **Chemical** | 0.5d | 2018-06-29 08:00 | 2018-06-29 12:00 |  | 94d |  |  |  | 7.2h |
| 99 | 2.15.1 | Chemical Form | 4h | 2018-06-29 08:00 | 2018-06-29 12:00 |  | 89.62d |  | start no earlier than 2018-06-29 08:00 | Intern2 | 4h |
| 100 | 2.15.2 | Search / Export | 4h | 2018-06-29 08:00 | 2018-06-29 12:00 |  | 89d |  | start no earlier than 2018-06-29 08:00 | Intern1 [80%] | 3.2h |
| 101 | 2.16 | **Contacts Individual** | 1.62d | 2018-08-15 15:00 | 2018-08-17 11:00 | 66 | 60.12d |  |  |  | 17h |
| 102 | 2.16.1 | Contacts Indiv. Form | 4h | 2018-08-16 11:00 | 2018-08-16 16:00 |  | 2666.62d | 2667.75d | start no earlier than 2018-06-29 08:00 | Intern2 | 4h |
| 103 | 2.16.2 | Indiv. Contact Preview | 1h | 2018-08-16 13:00 | 2018-08-16 14:00 |  | 2666.88d | 2668.12d | start no earlier than 2018-06-29 08:00 | Intern3 | 1h |
| 104 | 2.16.3 | Indiv. Contact Usage | 4h | 2018-08-15 15:00 | 2018-08-16 10:00 |  | 2667.25d | 2667.75d | start no earlier than 2018-07-02 08:00 | Full Time | 4h |
| 105 | 2.16.4 | Indiv. Contact Search | 4h | 2018-08-16 16:00 | 2018-08-17 11:00 |  | 2666.12d | 2667.75d | start no earlier than 2018-07-02 08:00 | Intern2 | 4h |
| 106 | 2.16.5 | Contact Search | 4h | 2018-08-16 10:00 | 2018-08-16 15:00 |  | 2666.75d | 2667.75d | start no earlier than 2018-07-02 08:00 | Full Time | 4h |
| 107 | 2.17 | **Contact Institutions** | 1.25d | 2018-08-16 14:00 | 2018-08-17 16:00 | 66 | 59.62d |  |  |  | 13h |
| 108 | 2.17.1 | Contact Inst. Form | 4h | 2018-08-17 11:00 | 2018-08-17 16:00 |  | 2665.62d | 2667.75d | start no earlier than 2018-07-03 08:00 | Intern2 | 4h |
| 109 | 2.17.2 | Combined Contact List | 3h | 2018-08-16 14:00 | 2018-08-16 17:00 |  | 2666.5d | 2667.88d | start no earlier than 2018-07-03 08:00 | Intern3 | 3h |
| 110 | 2.17.3 | Vendor List | 3h | 2018-08-17 08:00 | 2018-08-17 11:00 |  | 2666.12d | 2667.88d | start no earlier than 2018-07-03 08:00 | Intern3 | 3h |
| 111 | 2.17.4 | Service Providers | 3h | 2018-08-16 15:00 | 2018-08-17 09:00 |  | 2666.38d | 2667.88d | start no earlier than 2018-07-03 08:00 | Full Time | 3h |

| ID | WBS | Task | Duration | Start | Finish | Predecessors | Total slack | Free slack | Constraint | Resources | Work |
| --- | --- | --- | --- | --- | --- | --- | --- | --- | --- | --- | --- |
| 112 | 2.18 | **Department** | 0.88d | 2018-07-05 08:00 | 2018-07-05 16:00 |  | 84.5d | 0d |  |  | 10.2h |
| 113 | 2.18.1 | Department Form | 4h | 2018-07-05 08:00 | 2018-07-05 12:00 |  | 84.38d |  | start no earlier than 2018-07-05 08:00 | Intern1 [80%] | 3.2h |
| 114 | 2.18.2 | Department Management | 5h | 2018-07-05 08:00 | 2018-07-05 14:00 |  | 84.25d |  | start no earlier than 2018-07-05 08:00 | Intern2 | 5h |
| 115 | 2.18.3 | Department List | 2h | 2018-07-05 14:00 | 2018-07-05 16:00 |  | 84d |  | start no earlier than 2018-07-05 14:00 | Intern3 | 2h |
| 116 | 2.19 | **Equipment** | 2.5d | 2018-07-06 08:00 | 2018-07-10 12:00 |  | 88d |  |  |  | 41.4h |
| 117 | 2.19.1 | Equipment Form | 4h | 2018-07-06 08:00 | 2018-07-06 12:00 |  | 85d |  | start no earlier than 2018-07-06 08:00 | Intern1 [80%] | 3.2h |
| 118 | 2.19.2 | Equipment Preview | 6h | 2018-07-06 16:00 | 2018-07-10 12:00 |  | 2694d | 2696.12d | start no earlier than 2018-07-06 08:00 | Intern3; Intern2 | 6h |
| 119 | 2.19.3 | Equipment Related Items | 8h | 2018-07-06 11:00 | 2018-07-10 09:00 |  | 2694.38d | 2696d | start no earlier than 2018-07-06 08:00 | Intern2; Intern3 | 8h |
| 120 | 2.19.4 | Equipment Select | 5h | 2018-07-06 11:00 | 2018-07-06 17:00 |  | 2695.5d | 2695.88d | start no earlier than 2018-07-06 08:00 | Intern3 | 5h |
| 121 | 2.19.5 | Equipment Review | 3h | 2018-07-09 08:00 | 2018-07-09 11:00 |  | 84.12d |  | start no earlier than 2018-07-09 08:00 | Full Time | 3h |
| 122 | 2.19.6 | Equipment Search | 4h | 2018-07-09 08:00 | 2018-07-09 12:00 |  | 2695d |  | start no earlier than 2018-07-09 08:00 | Abby | 4h |
| 123 | 2.19.7 | Equipment to Sort | 4h | 2018-07-09 08:00 | 2018-07-09 12:00 |  | 84.62d |  | start no earlier than 2018-07-09 08:00 | Intern1 [80%]; Intern2 | 7.2h |
| 124 | 2.19.8 | Equipment Importer | 5h | 2018-07-09 08:00 | 2018-07-09 14:00 |  | 84.5d |  | start no earlier than 2018-07-09 08:00 | Intern3 | 5h |
| 125 | 2.20 | **Facilities PM Schedule** | 2.88d | 2018-08-16 08:00 | 2018-08-20 16:00 | 66 | 58.62d |  |  |  | 11h |
| 126 | 2.20.1 | Facilities PM Schedule Form | 4h | 2018-08-17 16:00 | 2018-08-20 16:00 |  | 2664.62d | 2667.75d | start no earlier than 2018-07-10 08:00 | Intern2 | 4h |
| 127 | 2.20.2 | Facilities List PM Schedules | 3h | 2018-08-16 08:00 | 2018-08-16 11:00 |  | 2667.12d | 2667.88d | start no earlier than 2018-07-10 08:00 | Abby | 3h |
| 128 | 2.20.3 | Facilities PM Release | 4h | 2018-08-17 09:00 | 2018-08-17 14:00 |  | 2665.88d | 2667.75d | start no earlier than 2018-07-10 08:00 | Full Time | 4h |
| 129 | 2.21 | **Facilities (and PM) Work Request** | 4.75d | 2018-08-15 10:00 | 2018-08-21 17:00 | 66 | 57.5d |  |  |  | 45h |
| 130 | 2.21.1 | Create/edit Form | 4h | 2018-08-21 13:00 | 2018-08-21 17:00 |  | 2663.5d | 2667.75d | start no earlier than 2018-07-11 08:00 | Intern2 | 4h |
| 131 | 2.21.2 | Individual Ticket view | 4h | 2018-08-16 11:00 | 2018-08-16 16:00 |  | 2666.62d | 2667.75d | start no earlier than 2018-07-11 08:00 | Abby | 4h |
| 132 | 2.21.3 | Facilities PM Printing/Export | 10h | 2018-08-17 11:00 | 2018-08-21 12:00 |  | 2664d | 2667.62d | start no earlier than 2018-07-11 08:00 | Intern2; Intern3 | 10h |
| 133 | 2.21.4 | Facilities Tickets/Export | 4h | 2018-08-15 10:00 | 2018-08-20 16:00 |  | 2664.62d | 57.38d | start no earlier than 2018-07-12 08:00 | Intern3; Intern1 | 4h |
| 134 | 2.21.5 | Facilities Quick Assign | 3h | 2018-08-16 16:00 | 2018-08-17 10:00 |  | 2666.25d | 2667.88d | start no earlier than 2018-07-12 08:00 | Abby | 3h |
| 135 | 2.21.6 | Facilities PM PDF or printable export | 4h | 2018-08-17 14:00 | 2018-08-20 12:00 |  | 2665d | 2667.75d | start no earlier than 2018-07-12 08:00 | Full Time | 4h |
| 136 | 2.21.7 | Signage Facilities | 2d | 2018-08-17 10:00 | 2018-08-21 14:00 |  | 2663.88d | 2666.25d | start no earlier than 2018-07-13 08:00 | Abby | 16h |

| ID | WBS | Task | Duration | Start | Finish | Predecessors | Total slack | Free slack | Constraint | Resources | Work |
| --- | --- | --- | --- | --- | --- | --- | --- | --- | --- | --- | --- |
| 137 | 2.22 | **Files** | 2.94d | 2018-07-20 08:00 | 2018-07-24 16:30 |  | 77.56d |  |  |  | 4.3h |
| 138 | 2.22.1 | File form | 6h | 2018-07-20 08:00 | 2018-07-20 15:00 |  | 74.75d |  | start no earlier than 2018-07-20 08:00 | Christian [20%] | 1.2h |
| 139 | 2.22.2 | Select File Grid | 1d | 2018-07-23 08:00 | 2018-07-23 17:00 |  | 73.5d |  | start no earlier than 2018-07-23 08:00 | Christian [20%] | 1.6h |
| 140 | 2.22.3 | Fiile Management | 7.5h | 2018-07-24 08:00 | 2018-07-24 16:30 |  | 72.56d |  | start no earlier than 2018-07-24 08:00 | Christian [20%] | 1.5h |
| 141 | 2.23 | **Group** | 1.75d | 2018-07-13 08:00 | 2018-07-16 15:00 |  | 77.62d | 0d |  |  | 23.6h |
| 142 | 2.23.1 | Group Form | 6h | 2018-07-16 08:00 | 2018-07-16 15:00 |  | 77.12d |  | start no earlier than 2018-07-16 08:00 | Intern2 | 6h |
| 143 | 2.23.2 | Group management dashboard | 7h | 2018-07-13 08:00 | 2018-07-13 16:00 |  | 78d |  | start no earlier than 2018-07-13 08:00 | Intern1 [80%]; Intern3 | 12.6h |
| 144 | 2.23.3 | Personnel Group Members | 5h | 2018-07-13 08:00 | 2018-07-13 14:00 |  | 78.25d |  | start no earlier than 2018-07-13 08:00 | Full Time | 5h |
| 145 | 2.24 | **IT Work Request** | 2.38d | 2018-08-21 11:00 | 2018-08-23 15:00 | 66 | 55.75d |  |  |  | 14.2h |
| 146 | 2.24.1 | Create/edit Form | 4h | 2018-08-21 14:00 | 2018-08-22 09:00 |  | 2663.38d | 2667.75d | start no earlier than 2018-07-16 08:00 | Abby | 4h |
| 147 | 2.24.2 | IT Support Request | 3.2h | 2018-08-21 11:00 | 2018-08-21 15:12 |  | 2663.72d | 2667.85d | start no earlier than 2018-07-18 08:00 | Intern3 | 3.2h |
| 148 | 2.24.3 | Signage IT Tickets | 4h | 2018-08-22 09:00 | 2018-08-22 14:00 |  | 2662.88d | 2667.75d | start no earlier than 2018-07-20 08:00 | Abby | 4h |
| 149 | 2.24.4 | Tickets by Customer | 3h | 2018-08-23 11:00 | 2018-08-23 15:00 |  | 2661.75d | 2667.88d | start no earlier than 2018-07-18 08:00 | Intern2 | 3h |
| 150 | 2.25 | **Internship** | 0.4d | 2018-07-18 08:00 | 2018-07-18 11:12 |  | 82.1d |  |  |  | 8.96h |
| 151 | 2.25.1 | Create/Edit Form | 3.2h | 2018-07-18 08:00 | 2018-07-18 11:12 |  | 2688.1d |  | start no earlier than 2018-07-18 08:00 | Abby | 3.2h |
| 152 | 2.25.2 | Internship Applic/Export | 3.2h | 2018-07-18 08:00 | 2018-07-18 11:12 |  | 77.72d |  | start no earlier than 2018-07-18 08:00 | Intern1 [80%]; Intern2 | 5.76h |
| 153 | 2.26 | **Job Posting** | 6.12d | 2018-08-15 10:00 | 2018-08-23 11:00 | 66 | 56.12d |  |  |  | 12h |
| 154 | 2.26.1 | Job Posting Form | 4h | 2018-08-22 16:00 | 2018-08-23 11:00 |  | 2662.12d | 2667.75d | start no earlier than 2018-07-18 08:00 | Intern2 | 4h |
| 155 | 2.26.2 | Current Job Posting | 4h | 2018-08-15 10:00 | 2018-08-22 16:00 |  | 2662.62d | 57.38d | start no earlier than 2018-07-18 08:00 | Intern1; Intern2 | 4h |
| 156 | 2.26.3 | Job Postings Management | 4h | 2018-08-20 16:00 | 2018-08-22 13:12 |  | 2662.97d | 2667.75d | start no earlier than 2018-07-18 08:00 | Intern3 | 4h |
| 157 | 2.27 | **Oligo Request** | 0.5d | 2018-07-19 08:00 | 2018-07-19 12:00 |  |  |  |  |  | 8h |
| 158 | 2.27.1 | Oligo Request Form | 4h | 2018-07-19 08:00 | 2018-07-19 12:00 |  | 76.62d |  |  | Intern2 | 4h |
| 159 | 2.27.2 | Oligo Management | 4h | 2018-07-19 08:00 | 2018-07-19 12:00 |  | 76.62d |  |  | Intern3 | 4h |
| 160 | 2.28 | **Outbound Invoice** | 3.19d | 2018-07-20 08:00 | 2018-07-25 09:30 | 86 |  |  |  |  | 16.4h |
| 161 | 2.28.1 | Outbound Invoice Form | 4h | 2018-07-20 08:00 | 2018-07-20 12:00 |  | 75d |  |  | Intern1 [80%] | 3.2h |
| 162 | 2.28.2 | Outbound Invoice Managment | 4h | 2018-07-20 08:00 | 2018-07-20 12:00 |  | 75.62d |  |  | Intern2; Intern3 | 8h |
| 163 | 2.28.3 | Outvoice Invoice Customer’s view | 8h | 2018-07-20 08:00 | 2018-07-25 09:30 |  | 2683.31d | 2686d |  | Christian [30%]; Full Time | 5.2h |

| ID | WBS | Task | Duration | Start | Finish | Predecessors | Total slack | Free slack | Constraint | Resources | Work |
| --- | --- | --- | --- | --- | --- | --- | --- | --- | --- | --- | --- |
| 164 | 2.29 | **P-Card Transaction** | 1d | 2018-07-23 08:00 | 2018-07-23 17:00 |  |  |  |  |  | 12.2h |
| 165 | 2.29.1 | P-Card Transaction Form | 4h | 2018-07-23 08:00 | 2018-07-23 12:00 |  | 2685d |  |  | Intern2 | 4h |
| 166 | 2.29.2 | Related P-Card Transactions | 4h | 2018-07-23 08:00 | 2018-07-23 12:00 |  | 74d |  |  | Intern1 [80%] | 3.2h |
| 167 | 2.29.3 | P-Card Transaction Importer | 5h | 2018-07-23 08:00 | 2018-07-23 14:00 |  | 74.5d |  |  | Intern3 | 5h |
| 168 | 2.30 | **Page/Story/Private Page/Article** | 1.69d | 2018-07-24 08:00 | 2018-07-25 14:30 |  |  |  |  |  | 22h |
| 169 | 2.30.1 | Create/edit form | 6h | 2018-07-24 08:00 | 2018-07-24 15:00 |  | 72.75d |  |  | Intern1 [80%] | 4.8h |
| 170 | 2.30.2 | Display page | 4h | 2018-07-24 08:00 | 2018-07-24 12:00 |  | 2684d |  |  | Abby | 4h |
| 171 | 2.30.3 | News | 4h | 2018-07-24 13:00 | 2018-07-24 17:00 |  | 2683.5d |  | start no earlier than 2018-07-24 13:00 | Abby | 4h |
| 172 | 2.30.4 | Content Management For Site Editors | 4h | 2018-07-25 09:30 | 2018-07-25 14:30 |  | 2682.81d | 2684d |  | Christian [30%] | 1.2h |
| 173 | 2.30.5 | Archive News | 4h | 2018-07-24 08:00 | 2018-07-24 12:00 |  | 73.62d |  |  | Intern2; Intern3 | 8h |
| 174 | 2.31 | **Parking Code Request** | 1d | 2018-07-25 08:00 | 2018-07-25 17:00 | 24 |  |  |  |  | 15.4h |
| 175 | 2.31.1 | Parking Code Request Form | 4h | 2018-07-25 08:00 | 2018-07-25 12:00 |  | 72.62d |  |  | Intern3 | 4h |
| 176 | 2.31.2 | Parking Code Manage / Export | 5h | 2018-07-25 08:00 | 2018-07-25 14:00 |  | 72.5d |  |  | Intern2 | 5h |
| 177 | 2.31.3 | Parking Code Next Code | 4h | 2018-07-25 08:00 | 2018-07-25 12:00 |  | 72d |  |  | Intern1 [80%] | 3.2h |
| 178 | 2.31.4 | Parking Codes Remaining Codes | 4h | 2018-07-25 13:00 | 2018-07-25 17:00 |  | 71.5d |  | start no earlier than 2018-07-25 13:00 | Intern1 [80%] | 3.2h |
| 179 | 2.32 | **Peptide Request** | 0.5d | 2018-07-26 08:00 | 2018-07-26 12:00 |  |  |  |  |  | 11.2h |
| 180 | 2.32.1 | Peptide Request Form | 4h | 2018-07-26 08:00 | 2018-07-26 12:00 |  | 71.62d |  |  | Intern1 [80%]; Intern2 | 7.2h |
| 181 | 2.32.2 | Peptide Requests Manage | 4h | 2018-07-26 08:00 | 2018-07-26 12:00 |  | 71.62d |  |  | Intern3 | 4h |
| 182 | 2.33 | **Primer** | 0.62d | 2018-07-26 08:00 | 2018-07-26 14:00 |  |  |  |  |  | 9h |
| 183 | 2.33.1 | Primer Form | 4h | 2018-07-26 08:00 | 2018-07-26 12:00 |  | 2682d |  |  | Abby | 4h |
| 184 | 2.33.2 | Primer Database | 5h | 2018-07-26 08:00 | 2018-07-26 14:00 |  | 70.88d |  |  | Full Time | 5h |
| 185 | 2.34 | **Publication** | 1.5d | 2018-07-27 08:00 | 2018-07-30 12:00 |  |  |  |  |  | 35.4h |
| 186 | 2.34.1 | Publication Form | 4h | 2018-07-27 08:00 | 2018-07-27 12:00 |  | 70.62d |  |  | Intern1 [80%]; Intern2 | 7.2h |
| 187 | 2.34.2 | Display page | 5h | 2018-07-27 08:00 | 2018-07-27 14:00 |  | 2680.88d |  |  | Abby | 5h |
| 188 | 2.34.3 | Group Publications | 4h | 2018-07-27 08:00 | 2018-07-27 12:00 | 35 | 70.62d |  |  | Intern3 | 4h |
| 189 | 2.34.4 | Publications Report/Export | 4h | 2018-07-30 08:00 | 2018-07-30 12:00 |  | 69.62d |  | start no earlier than 2018-07-30 08:00 | Intern2 | 4h |
| 190 | 2.34.5 | Publications by Author | 4h | 2018-07-23 13:00 | 2018-07-23 17:00 |  | 2684.5d | 2685d | start no earlier than 2018-07-23 08:00 | Intern1 [80%]; Intern2 | 7.2h |
| 191 | 2.34.6 | Recent Publications | 4h | 2018-07-30 08:00 | 2018-07-30 12:00 |  | 2680d |  | start no earlier than 2018-07-30 08:00 | Abby | 4h |
| 192 | 2.34.7 | All publications for public viewing | 4h | 2018-07-24 13:00 | 2018-07-24 17:00 |  | 2683.5d | 2685d | start no earlier than 2018-07-23 08:00 | Intern2 | 4h |

Notes:
- 177: Could be a model or controller func
- 178: Could be a model or controller func

| ID | WBS | Task | Duration | Start | Finish | Predecessors | Total slack | Free slack | Constraint | Resources | Work |
| --- | --- | --- | --- | --- | --- | --- | --- | --- | --- | --- | --- |
| 193 | 2.35 | **Purchase Request** | 2d | 2018-07-31 08:00 | 2018-08-01 17:00 |  |  |  |  |  | 30.4h |
| 194 | 2.35.1 | Purchase Request Form | 4h | 2018-07-31 08:00 | 2018-07-31 12:00 |  | 68.62d |  | start no earlier than 2018-07-31 08:00 | Intern2 | 4h |
| 195 | 2.35.2 | Display page | 5h | 2018-07-31 08:00 | 2018-07-31 14:00 |  | 2678.88d |  |  | Abby | 5h |
| 196 | 2.35.3 | Print friendly page | 4h | 2018-07-31 08:00 | 2018-07-31 12:00 |  | 68d |  |  | Intern1 [80%] | 3.2h |
| 197 | 2.35.4 | Line Item Preview | 4h | 2018-07-31 08:00 | 2018-07-31 12:00 |  | 68d |  |  | Christian [30%] | 1.2h |
| 198 | 2.35.5 | Purchasing by Group | 4h | 2018-07-31 08:00 | 2018-07-31 12:00 | 35 | 68.62d |  |  | Intern3 | 4h |
| 199 | 2.35.6 | Purchasing Data Download/Export | 5h | 2018-08-01 08:00 | 2018-08-01 14:00 |  | 67.5d |  | start no earlier than 2018-08-01 08:00 | Intern2 | 5h |
| 200 | 2.35.7 | Purchasing Management/Export | 8h? | 2018-08-01 08:00 | 2018-08-01 17:00 |  | 66.5d |  | start no earlier than 2018-08-01 08:00 | Full Time | 8h |
| 201 | 2.36 | **Research Progress Report** | 5d | 2018-08-01 08:00 | 2018-08-07 17:00 |  |  |  |  |  | 13h |
| 202 | 2.36.1 | Create/edit form | 4h | 2018-08-01 14:00 | 2018-08-02 14:00 |  | 2676.88d | 2678d |  | Intern2 | 4h |
| 203 | 2.36.2 | Display page | 5h | 2018-08-01 08:00 | 2018-08-01 14:00 |  | 2677.88d |  |  | Abby | 5h |
| 204 | 2.36.3 | List of reports by seed grant | 4h | 2018-08-07 13:00 | 2018-08-07 17:00 | 47, 219 | 63.12d |  | start no earlier than 2018-08-02 08:00 | Intern3 | 4h |
| 205 | 2.37 | **Room** | 0.62d | 2018-08-02 08:00 | 2018-08-02 14:00 | 12 |  |  |  |  | 14.4h |
| 206 | 2.37.1 | Room Form | 4h | 2018-08-02 08:00 | 2018-08-02 12:00 |  | 65.5d |  |  | Intern2 | 4h |
| 207 | 2.37.2 | Room management/Export | 4h | 2018-08-02 08:00 | 2018-08-02 12:00 |  | 65.5d |  |  | Intern3 | 4h |
| 208 | 2.37.3 | List of rooms for Event Reservation | 3h | 2018-08-02 08:00 | 2018-08-02 11:00 |  | 65.62d |  |  | Intern1 [80%] | 2.4h |
| 209 | 2.37.4 | List of rooms | 4h | 2018-08-02 08:00 | 2018-08-02 12:00 |  | 65.5d |  |  | Abby | 4h |
| 210 | 2.38 | **Room Reservation/Event** | 2.75d | 2018-08-03 08:00 | 2018-08-07 15:00 | 205 |  |  |  |  | 44.2h |
| 211 | 2.38.1 | Create/edit form | 4h | 2018-08-03 08:00 | 2018-08-03 12:00 |  | 65.62d |  |  | Intern2 | 4h |
| 212 | 2.38.2 | Display page | 4h | 2018-08-03 08:00 | 2018-08-03 12:00 |  | 2676d |  |  | Abby | 4h |
| 213 | 2.38.3 | IBBR Seminar Series/Export | 4h | 2018-08-03 08:00 | 2018-08-03 12:00 |  | 65d |  |  | Intern1 [80%] | 3.2h |
| 214 | 2.38.4 | Seminar management | 4h | 2018-08-03 08:00 | 2018-08-03 12:00 |  | 65.62d |  |  | Intern3 | 4h |
| 215 | 2.38.5 | Upcoming Events for Events page | 4h | 2018-08-06 08:00 | 2018-08-06 12:00 | 25, 92 | 2674.62d | 18.5d | start no earlier than 2018-08-06 08:00 | Intern1 [80%]; Intern2 | 7.2h |
| 216 | 2.38.6 | Upcoming Events Front page | 12h | 2018-08-06 08:00 | 2018-08-07 15:00 | 25, 92 | 2673.75d | 2674.75d | start no earlier than 2018-08-06 08:00 | Abby; Christian [30%] | 7.8h |
| 217 | 2.38.7 | Dashboard | 8h | 2018-08-06 08:00 | 2018-08-06 17:00 |  | 2674.5d |  | start no earlier than 2018-08-06 08:00 | Abby | 8h |
| 218 | 2.38.8 | Upcoming Events IT Setup | 6h | 2018-08-06 08:00 | 2018-08-06 15:00 | 25, 92 | 2674.75d |  | start no earlier than 2018-08-06 08:00 | Full Time | 6h |

| ID | WBS | Task | Duration | Start | Finish | Predecessors | Total slack | Free slack | Constraint | Resources | Work |
| --- | --- | --- | --- | --- | --- | --- | --- | --- | --- | --- | --- |
| 219 | 2.39 | **Seed Grant Proposal** | 0.5d | 2018-08-07 08:00 | 2018-08-07 12:00 |  |  |  |  |  | 8h |
| 220 | 2.39.1 | Create/edit form | 4h | 2018-08-07 08:00 | 2018-08-07 12:00 |  | 63.12d |  |  | Intern2 | 4h |
| 221 | 2.39.2 | Seed Grant Review | 4h | 2018-08-07 08:00 | 2018-08-07 12:00 |  | 63.12d |  |  | Intern3 | 4h |
| 222 | 2.40 | **Service Contract** | 1d | 2018-08-07 08:00 | 2018-08-07 17:00 | 30 |  |  |  |  | 7.2h |
| 223 | 2.40.1 | Create/edit form | 4h | 2018-08-07 13:00 | 2018-08-07 17:00 |  | 63.12d |  | start no earlier than 2018-08-07 13:00 | Intern2 | 4h |
| 224 | 2.40.2 | Service Contracts Management | 4h | 2018-08-07 08:00 | 2018-08-07 12:00 |  | 63d |  |  | Intern1 [80%] | 3.2h |
| 225 | 2.41 | **Shipping Request** | 0.5d | 2018-08-08 08:00 | 2018-08-08 12:00 | 24 |  |  |  |  | 15.2h |
| 226 | 2.41.1 | Create/edit form | 4h | 2018-08-08 08:00 | 2018-08-08 12:00 |  | 61.5d |  |  | Full Time | 4h |
| 227 | 2.41.2 | Shipper Management | 4h | 2018-08-08 08:00 | 2018-08-08 12:00 |  | 62.12d |  |  | Intern2; Intern3 | 8h |
| 228 | 2.41.3 | Business Office Management | 4h | 2018-08-08 08:00 | 2018-08-08 12:00 |  | 61.5d |  |  | Intern1 [80%] | 3.2h |
| 229 | 2.42 | **Student Evaluation** | 0.5d | 2018-08-09 08:00 | 2018-08-09 12:00 |  |  |  |  |  | 11.2h |
| 230 | 2.42.1 | Create/edit form | 4h | 2018-08-09 08:00 | 2018-08-09 12:00 |  | 61.12d |  |  | Intern2 | 4h |
| 231 | 2.42.2 | Student_Evaluation – Page | 4h | 2018-08-09 08:00 | 2018-08-09 12:00 |  | 61.12d |  |  | Intern3 | 4h |
| 232 | 2.42.3 | Management | 4h | 2018-08-09 08:00 | 2018-08-09 12:00 |  | 60.5d |  |  | Intern1 [80%] | 3.2h |
| 233 | 2.43 | **Tags** | 1d | 2018-08-10 08:00 | 2018-08-10 17:00 |  |  |  |  |  | 2.4h |
| 234 | 2.43.1 | List of tags | 4h | 2018-08-10 08:00 | 2018-08-10 12:00 |  | 60d |  |  | Christian [30%] | 1.2h |
| 235 | 2.43.2 | Tag manager | 4h | 2018-08-10 13:00 | 2018-08-10 17:00 |  | 2670.5d | 2671d |  | Christian [30%] | 1.2h |
| 236 | 2.44 | **Travel Expense Worksheet** | 0.5d | 2018-08-10 08:00 | 2018-08-10 12:00 | 5, 6, 7, 8, 9 |  |  |  |  | 11.2h |
| 237 | 2.44.1 | Create/edit form | 4h | 2018-08-10 08:00 | 2018-08-10 12:00 |  | 60.62d |  |  | Intern2 | 4h |
| 238 | 2.44.2 | Management | 4h | 2018-08-10 08:00 | 2018-08-10 12:00 |  | 60.62d |  |  | Intern3; Intern1 [80%] | 7.2h |
| 239 | 2.45 | **Travel Request** | 0.5d | 2018-08-13 08:00 | 2018-08-13 12:00 | 8 |  |  |  |  | 15.2h |
| 240 | 2.45.1 | Create/edit form | 4h | 2018-08-13 08:00 | 2018-08-13 12:00 |  | 59d |  |  | Intern1 [80%] | 3.2h |
| 241 | 2.45.2 | Travel Manage | 4h | 2018-08-13 08:00 | 2018-08-13 12:00 |  | 59.62d |  |  | Intern2; Intern3 | 8h |
| 242 | 2.45.3 | Travel Select | 4h | 2018-08-13 08:00 | 2018-08-13 12:00 |  | 59d |  |  | Full Time | 4h |

| ID | WBS | Task | Duration | Start | Finish | Predecessors | Total slack | Free slack | Constraint | Resources | Work |
| --- | --- | --- | --- | --- | --- | --- | --- | --- | --- | --- | --- |
| 243 | 2.46 | **Webform** | 6.62d | 2018-08-14 08:00 | 2018-08-22 14:00 |  |  |  |  | Christian [20%] | 40.6h |
| 244 | 2.46.1 | Create/edit form | 6h | 2018-08-14 08:00 | 2018-08-14 15:00 |  | 56.12d | 0d |  | Intern2 | 6h |
| 245 | 2.46.2 | View/manage submissions per webform | 1d | 2018-08-14 08:00 | 2018-08-14 17:00 |  | 2668.5d |  |  | Intern1 | 8h |
| 246 | 2.46.3 | Display page to submit webform | 2d | 2018-08-14 08:00 | 2018-08-15 17:00 |  | 2667.5d |  |  | Abby | 16h |
| 247 | 3 | **Create Controllers** | 19.5d | 2018-08-20 08:00 | 2018-09-17 12:00 |  |  |  |  |  | 232.7h |
| 248 | 3.1 | Oligo In-process | 3h | 2018-08-20 08:00 | 2018-08-20 11:00 | 39 | 54.12d |  |  | Full Time | 3h |
| 249 | 3.2 | Oligo completed | 3h | 2018-08-23 15:00 | 2018-08-24 12:00 | 39 | 2661d | 2665.12d |  | Intern2 | 3h |
| 250 | 3.3 | Account – deactivate | 3h | 2018-08-20 08:00 | 2018-08-20 11:00 | 24 | 54.75d |  |  | Intern3 | 3h |
| 251 | 3.4 | Account schedule deactivate | 3h | 2018-08-22 13:12 | 2018-08-22 16:12 | 24 | 2662.6d | 2665.12d |  | Intern3 | 3h |
| 252 | 3.5 | Account - deactivate notification | 4h | 2018-08-20 08:00 | 2018-08-20 12:00 | 24 | 54.62d |  |  | Intern1; Intern2 | 4h |
| 253 | 3.6 | Account schedule deactivate notification | 4h | 2018-08-21 13:00 | 2018-08-21 17:00 | 24 | 2663.5d | 2664d | start no earlier than 2018-08-21 08:00 | Full Time | 4h |
| 254 | 3.7 | Travel - Email TES Reminder | 3h | 2018-08-21 08:00 | 2018-08-21 11:00 |  | 53.75d |  | start no earlier than 2018-08-21 08:00 | Intern3 | 3h |
| 255 | 3.8 | Check for reserved rooms | 4h | 2018-08-21 08:00 | 2018-08-21 12:00 | 25 | 53d |  | start no earlier than 2018-08-21 08:00 | Full Time | 4h |
| 256 | 3.9 | Check if any rooms in new event require confirmation | 3h | 2018-08-21 08:00 | 2018-08-21 11:00 | 25 | 2664.12d |  | start no earlier than 2018-08-21 08:00 | Abby | 3h |
| 257 | 3.10 | Peptide In-process | 3h | 2018-08-22 08:00 | 2018-08-22 11:00 | 44 | 52.75d |  | start no earlier than 2018-08-22 08:00 | Intern2; Intern3 | 6h |
| 258 | 3.11 | Peptide completed | 3h | 2018-08-22 16:12 | 2018-08-23 10:12 | 44 | 2662.22d | 2663.12d | start no earlier than 2018-08-22 08:00 | Intern3 | 3h |
| 259 | 3.12 | Parking Code Request – Deny | 3h | 2018-08-22 08:00 | 2018-08-22 11:00 | 43 | 52.12d |  | start no earlier than 2018-08-22 08:00 | Full Time | 3h |
| 260 | 3.13 | Parking Code Request – Approve | 3h | 2018-08-22 14:00 | 2018-08-22 17:00 | 43 | 2662.5d | 2663.12d | start no earlier than 2018-08-22 08:00 | Christian [30%] | 0.9h |
| 261 | 3.14 | Generate PM tickets from schedule | 3h | 2018-08-23 11:00 | 2018-08-23 15:00 | 36 | 51.38d |  | start no earlier than 2018-08-23 11:00 | Intern3 | 3h |
| 262 | 3.15 | Personnel - set status to active/inactive | 4h | 2018-08-27 08:00 | 2018-08-27 12:00 | 23 | 49d |  | start no earlier than 2018-08-27 08:00 | Full Time | 4h |
| 263 | 3.16 | Personnel - set new username | 4h | 2018-08-23 08:00 | 2018-08-23 12:00 | 23 | 2662d |  | start no earlier than 2018-08-23 08:00 | Abby | 4h |
| 264 | 3.17 | Personnel - subscribe to OG | 3h | 2018-08-24 08:00 | 2018-08-24 11:00 | 23 | 50.12d |  | start no earlier than 2018-08-24 08:00 | Christian [30%] | 0.9h |
| 265 | 3.18 | Personnel - create new Drupal user | 3h | 2018-08-24 08:00 | 2018-08-24 11:00 | 23 | 50.12d |  | start no earlier than 2018-08-24 08:00 | Full Time | 3h |
| 266 | 3.19 | Travel – Approve | 3h | 2018-08-24 08:00 | 2018-08-24 11:00 |  | 50.75d |  | start no earlier than 2018-08-24 08:00 | Intern2; Intern3 | 6h |
| 267 | 3.20 | Sync person and user email | 3h | 2018-08-27 08:00 | 2018-08-27 11:00 | 23 | 2660.12d |  | start no earlier than 2018-08-27 08:00 | Abby | 3h |
| 268 | 3.21 | Purchase Request – Ordered | 3h | 2018-08-27 08:00 | 2018-08-27 11:00 | 46 | 49.75d |  | start no earlier than 2018-08-27 08:00 | Intern2 | 3h |
| 269 | 3.22 | Purchase Request – Received | 3h | 2018-08-27 08:00 | 2018-08-27 11:00 | 46 | 49.75d |  | start no earlier than 2018-08-27 08:00 | Intern3 | 3h |
| 270 | 3.23 | Update post date | 3h | 2018-08-28 08:00 | 2018-08-28 11:00 |  | 48.12d |  | start no earlier than 2018-08-28 08:00 | Full Time | 3h |
| 271 | 3.24 | Seed Grant - Mark for Review | 3h | 2018-08-28 08:00 | 2018-08-28 11:00 | 47 | 2659.12d |  | start no earlier than 2018-08-28 08:00 | Abby | 3h |
| 272 | 3.25 | Seed Grant - Mark for Approved | 3h | 2018-08-28 08:00 | 2018-08-28 11:00 | 47 | 48.75d |  | start no earlier than 2018-08-28 08:00 | Intern2 | 3h |
| 273 | 3.26 | Rules link: Approve travel request condition | 4h | 2018-08-28 08:00 | 2018-08-28 12:00 |  | 48.62d |  | start no earlier than 2018-08-28 08:00 | Intern1 | 4h |
| 274 | 3.27 | Rules link: Approve travel request rules set | 4h | 2018-08-29 08:00 | 2018-08-29 12:00 |  | 47.62d |  | start no earlier than 2018-08-29 08:00 | Intern2 | 4h |
| 275 | 3.28 | Purchasing - Create New Chemical | 3h | 2018-08-29 08:00 | 2018-08-29 11:00 | 28 | 47.75d |  | start no earlier than 2018-08-29 08:00 | Intern3 | 3h |
| 276 | 3.29 | Purchase Request – Approve | 3h | 2018-08-29 08:00 | 2018-08-29 11:00 |  | 2658.12d |  | start no earlier than 2018-08-29 08:00 | Abby | 3h |
| 277 | 3.30 | Purchase Request – Cancel | 3h | 2018-08-29 08:00 | 2018-08-29 11:00 | 46 | 47.12d |  | start no earlier than 2018-08-29 08:00 | Christian [30%] | 0.9h |
| 278 | 3.31 | Email Testing Rush Orders | 3h | 2018-08-30 08:00 | 2018-08-30 11:00 |  | 46.12d |  | start no earlier than 2018-08-30 08:00 | Full Time | 3h |
| 279 | 3.32 | PM - Pull schedule to execute | 3h | 2018-08-30 08:00 | 2018-08-30 11:00 |  | 46.75d |  | start no earlier than 2018-08-30 08:00 | Intern2 | 3h |
| 280 | 3.33 | Purchasing - Clone Line Item | 3h | 2018-08-30 08:00 | 2018-08-30 11:00 | 46 | 46.75d |  | start no earlier than 2018-08-30 08:00 | Intern3 | 3h |
| 281 | 3.34 | Notify IT of a same day event needing setup | 3h | 2018-08-31 08:00 | 2018-08-31 11:00 | 25, 215 | 2656.12d |  | start no earlier than 2018-08-31 08:00 | Intern1 | 3h |
| 282 | 3.35 | Outvoice Payment Received | 4h | 2018-08-31 08:00 | 2018-08-31 12:00 | 40 | 45.62d |  | start no earlier than 2018-08-31 08:00 | Intern2 | 4h |
| 283 | 3.36 | User account with that email does not already exist | 3h | 2018-08-31 08:00 | 2018-08-31 11:00 | 24 | 45.12d |  | start no earlier than 2018-08-31 08:00 | Full Time | 3h |
| 284 | 3.37 | Set Login Shell | 6h | 2018-08-31 08:00 | 2018-08-31 15:00 |  | 44.75d |  | start no earlier than 2018-08-31 08:00 | Christian [30%] | 1.8h |
| 285 | 3.38 | Open duplicate purchase request | 3h | 2018-09-03 08:00 | 2018-09-03 11:00 | 46 | 44.75d |  | start no earlier than 2018-09-03 08:00 | Intern2 | 3h |
| 286 | 3.39 | Outvoice Payment Reminder | 4h | 2018-09-03 08:00 | 2018-09-03 12:00 | 40 | 44.62d |  | start no earlier than 2018-09-03 08:00 | Intern3 | 4h |
| 287 | 3.40 | Outvoice - Mark Ready | 3h | 2018-09-03 08:00 | 2018-09-03 11:00 | 40 | 44.12d |  | start no earlier than 2018-09-03 08:00 | Full Time | 3h |
| 288 | 3.41 | New IT ticket for Youtube live events postprocessing | 3h | 2018-09-05 08:00 | 2018-09-05 11:00 | 25, 215 | 2654.12d |  | start no earlier than 2018-09-04 08:00 | Intern3 | 3h |
| 289 | 3.42 | Mark job posting as complete | 3h | 2018-09-05 08:00 | 2018-09-05 11:00 | 38 | 43.75d |  | start no earlier than 2018-09-04 08:00 | Intern2 | 3h |
| 290 | 3.43 | Equipment - Set scan date to now | 3h | 2018-09-04 08:00 | 2018-09-05 11:00 | 14, 32 | 43.12d |  | start no earlier than 2018-09-04 08:00 | Intern1 |  |
| 291 | 3.44 | Mark as surplused | 3h | 2018-09-06 08:00 | 2018-09-06 11:00 | 14, 32 | 42.75d |  | start no earlier than 2018-09-06 08:00 | Intern2 | 3h |
| 292 | 3.45 | Unflag Equipment | 3h | 2018-09-06 08:00 | 2018-09-06 11:00 | 14, 32 | 42.75d |  | start no earlier than 2018-09-06 08:00 | Intern3 | 3h |
| 293 | 3.46 | Purchase Request – Hold | 2h | 2018-09-06 08:00 | 2018-09-06 10:00 | 46 | 42.25d |  | start no earlier than 2018-09-06 08:00 | Intern1 | 2h |
| 294 | 3.47 | Convert Account Splits | 4h | 2018-09-06 08:00 | 2018-09-06 12:00 | 24 | 42d |  | start no earlier than 2018-09-06 08:00 | Full Time | 4h |
| 295 | 3.48 | Account Approval | 3h | 2018-09-07 08:00 | 2018-09-07 11:00 | 24 | 2652.12d |  | start no earlier than 2018-09-07 08:00 | Abby | 3h |
| 296 | 3.49 | Travel Approve Account – Personnel | 3h | 2018-09-07 08:00 | 2018-09-07 11:00 | 23, 24 | 41.75d |  | start no earlier than 2018-09-07 08:00 | Intern2 | 3h |
| 297 | 3.50 | Purchasing Approve Account | 3h | 2018-09-07 08:00 | 2018-09-07 11:00 | 24 | 41.75d |  | start no earlier than 2018-09-07 08:00 | Intern3 | 3h |
| 298 | 3.51 | Shipping Approve Account | 3h | 2018-09-07 08:00 | 2018-09-07 11:00 | 24 | 41.12d |  | start no earlier than 2018-09-07 08:00 | Intern1 | 3h |
| 299 | 3.52 | Shipping PI Approve | 3h | 2018-09-07 08:00 | 2018-09-07 11:00 |  | 41.12d |  | start no earlier than 2018-09-07 08:00 | Full Time | 3h |
| 300 | 3.53 | Mark As Shipped | 3h | 2018-09-10 08:00 | 2018-09-10 11:00 |  | 40.75d |  | start no earlier than 2018-09-10 08:00 | Intern3 | 3h |
| 301 | 3.54 | Convert Account Authorized Individuals | 4h | 2018-09-10 08:00 | 2018-09-10 12:00 | 23, 24 | 40.62d |  | start no earlier than 2018-09-10 08:00 | Intern2 | 4h |
| 302 | 3.55 | Travel - Account deny | 3h | 2018-09-10 08:00 | 2018-09-10 11:00 |  | 40.12d |  | start no earlier than 2018-09-10 08:00 | Intern1 | 3h |
| 303 | 3.56 | Shipping - Account deny | 3h | 2018-09-10 08:00 | 2018-09-10 11:00 | 24 | 40.12d |  | start no earlier than 2018-09-10 08:00 | Full Time | 3h |
| 304 | 3.57 | Account Approval - Deny/Cancel | 3h | 2018-09-10 08:00 | 2018-09-10 11:00 | 24 | 2651.12d |  | start no earlier than 2018-09-10 08:00 | Abby | 3h |
| 305 | 3.58 | Rules link: Add tracking number to shipment rules set | 4h | 2018-09-11 08:00 | 2018-09-11 12:00 | 225 | 39.62d |  | start no earlier than 2018-09-11 08:00 | Intern1; Intern2 | 8h |
| 306 | 3.59 | Rules link: Add tracking number to shipment condition | 4h | 2018-09-11 08:00 | 2018-09-11 12:00 | 225 | 39.62d |  | start no earlier than 2018-09-11 08:00 | Intern3 | 4h |
| 307 | 3.60 | Unpublish item | 3h | 2018-09-11 08:00 | 2018-09-11 11:00 |  | 39.12d |  | start no earlier than 2018-09-11 08:00 | Full Time | 3h |
| 308 | 3.61 | Rules link: Unpublish Item rules set | 4h | 2018-09-12 08:00 | 2018-09-12 12:00 |  | 2649d |  | start no earlier than 2018-09-12 08:00 | Abby | 4h |
| 309 | 3.62 | Rules link: Unpublish Item condition | 4h | 2018-09-12 08:00 | 2018-09-12 12:00 |  | 38d |  | start no earlier than 2018-09-12 08:00 | Christian [30%] | 1.2h |
| 310 | 3.63 | Shipping - PI deny | 3h | 2018-09-12 08:00 | 2018-09-12 11:00 | 225 | 38.12d |  | start no earlier than 2018-09-12 08:00 | Full Time | 3h |
| 311 | 3.64 | Shipping - Notify Ready to Ship | 3h | 2018-09-13 08:00 | 2018-09-13 11:00 | 225 | 37.12d |  | start no earlier than 2018-09-13 08:00 | Intern1 | 3h |
| 312 | 3.65 | Job – Approval | 3h | 2018-09-13 08:00 | 2018-09-13 11:00 | 38 | 37.75d |  | start no earlier than 2018-09-13 08:00 | Intern2 | 3h |

Notes:
- 246: I put a 2 day break between the end of webform and the start of create controllers (next section).

| ID | WBS | Task | Duration | Start | Finish | Predecessors | Total slack | Constraint | Resources | Work |
| --- | --- | --- | --- | --- | --- | --- | --- | --- | --- | --- |
| 313 | 3.66 | Job - Account Approval | 3h | 2018-09-13 08:00 | 2018-09-13 11:00 | 24 | 37.75d | start no earlier than 2018-09-13 08:00 | Intern3 | 3h |
| 314 | 3.67 | Job Posting - Account Deny | 3h | 2018-09-14 08:00 | 2018-09-14 11:00 | 38 | 36.75d | start no earlier than 2018-09-14 08:00 | Intern1; Intern2 | 6h |
| 315 | 3.68 | Travel Approve Account – Contact | 3h | 2018-09-14 08:00 | 2018-09-14 11:00 | 24 | 36.75d | start no earlier than 2018-09-14 08:00 | Intern3 | 3h |
| 316 | 3.69 | Shipping Review Approve | 3h | 2018-09-14 08:00 | 2018-09-14 11:00 | 225 | 36.12d | start no earlier than 2018-09-14 08:00 | Full Time | 3h |
| 317 | 3.70 | Create Management Note | 4h | 2018-09-14 08:00 | 2018-09-14 12:00 |  | 2647d | start no earlier than 2018-09-14 08:00 | Abby | 4h |
| 318 | 3.71 | Student Evaluation Email Reminder | 4h | 2018-09-17 08:00 | 2018-09-17 12:00 | 229 | 35.62d | start no earlier than 2018-09-17 08:00 | Intern1; Intern3 | 8h |
| 319 | 4 | **Create Roles** | 1d | 2018-09-17 08:00 | 2018-09-17 17:00 |  |  |  | Christian [30%]; Full Time | 10.4h |
| 320 | 4.1 | Anon user | 0.5h | 2018-09-17 08:00 | 2018-09-17 08:30 |  | 34.81d |  |  |  |
| 321 | 4.2 | Authenticated user | 0.5h | 2018-09-17 08:00 | 2018-09-17 08:30 |  | 34.81d |  |  |  |
| 322 | 4.3 | Account Manager | 0.5h | 2018-09-17 08:00 | 2018-09-17 08:30 |  | 34.81d |  |  |  |
| 323 | 4.4 | Director’s Office | 0.5h | 2018-09-17 08:00 | 2018-09-17 08:30 |  | 34.81d |  |  |  |
| 324 | 4.5 | Event Coordinator | 0.5h | 2018-09-17 08:00 | 2018-09-17 08:30 |  | 34.81d |  |  |  |
| 325 | 4.6 | Facilities and Lab Services Support Staff – Combine these two | 0.5h | 2018-09-17 08:00 | 2018-09-17 08:30 |  | 34.81d |  |  |  |
| 326 | 4.7 | Facilities and Lab Services Work Manager | 0.5h | 2018-09-17 08:00 | 2018-09-17 08:30 |  | 34.81d |  |  |  |
| 327 | 4.8 | Group Leader | 0.5h | 2018-09-17 08:00 | 2018-09-17 08:30 |  | 34.81d |  |  |  |
| 328 | 4.9 | Human Resources | 0.5h | 2018-09-17 08:00 | 2018-09-17 08:30 |  | 34.81d |  |  |  |
| 329 | 4.10 | Internship Coordinators | 0.5h | 2018-09-17 08:00 | 2018-09-17 08:30 |  | 34.81d |  |  |  |
| 330 | 4.11 | IT Support Staff | 0.5h | 2018-09-17 08:00 | 2018-09-17 08:30 |  | 34.81d |  |  |  |
| 331 | 4.12 | Oligo Managers | 0.5h | 2018-09-17 08:00 | 2018-09-17 08:30 |  | 34.81d |  |  |  |
| 332 | 4.13 | Purchasers | 0.5h | 2018-09-17 08:00 | 2018-09-17 08:30 |  | 34.81d |  |  |  |
| 333 | 4.14 | Seminar Coordinators | 0.5h | 2018-09-17 08:00 | 2018-09-17 08:30 |  | 34.81d |  |  |  |
| 334 | 4.15 | Public Site Editor | 0.5h | 2018-09-17 08:00 | 2018-09-17 08:30 |  | 34.81d |  |  |  |
| 335 | 4.16 | Travel Coordinator | 0.5h | 2018-09-17 08:00 | 2018-09-17 08:30 |  | 34.81d |  |  |  |
| 336 | 4.17 | Parking Approver | 0.5h | 2018-09-17 08:00 | 2018-09-17 08:30 |  | 34.81d |  |  |  |
| 337 | 4.18 | IBBR Personnel | 0.5h | 2018-09-17 08:00 | 2018-09-17 08:30 |  | 34.81d |  |  |  |
| 338 | 4.19 | Sequencing Manager | 0.5h | 2018-09-17 08:00 | 2018-09-17 08:30 |  | 34.81d |  |  |  |
| 339 | 4.20 | Chemical Inventory Manager | 0.5h | 2018-09-17 08:00 | 2018-09-17 08:30 |  | 34.81d |  |  |  |
| 340 | 4.21 | Fellows? | 0.5h | 2018-09-17 08:00 | 2018-09-17 08:30 |  | 34.81d |  |  |  |
| 341 | 4.22 | Seed Grant Administrator | 0.5h | 2018-09-17 08:00 | 2018-09-17 08:30 |  | 34.81d |  |  |  |
| 342 | 4.23 | RESTFul API User | 0.5h | 2018-09-17 08:00 | 2018-09-17 08:30 |  | 34.81d |  |  |  |
| 343 | 4.24 | Account Approver | 0.5h | 2018-09-17 08:00 | 2018-09-17 08:30 |  | 34.81d |  |  |  |
| 344 | 4.25 | Shipping | 0.5h | 2018-09-17 08:00 | 2018-09-17 08:30 |  | 34.81d |  |  |  |
| 345 | 4.26 | Shipping Reviewer | 0.5h | 2018-09-17 08:00 | 2018-09-17 08:30 |  | 34.81d |  |  |  |
| 346 | 4.27 | Student Evaluator | 0.5h | 2018-09-17 08:00 | 2018-09-17 08:30 |  | 34.81d |  |  |  |
| 347 | 4.28 | Administrator | 0.5h | 2018-09-17 08:00 | 2018-09-17 08:30 |  | 34.81d |  |  |  |
| 348 | 4.29 | NIST API User | 0.5h | 2018-09-17 08:00 | 2018-09-17 08:30 |  | 34.81d |  |  |  |

Notes:
- 319: These really should not take long at all. Middleware?

| ID | WBS | Task | Duration | Start | Finish | Predecessors | Total slack | Constraint | Resources | Work |
| --- | --- | --- | --- | --- | --- | --- | --- | --- | --- | --- |
| 349 | 5 | **Create Permissions** | 8.62d | 2018-09-18 08:00 | 2018-09-28 14:00 | 319 | 30.88d |  |  | 173.5h |
| 350 | 5.1 | Personnel | 6h | 2018-09-18 08:00 | 2018-09-18 15:00 |  | 2644.75d |  | Intern1 | 6h |
| 351 | 5.2 | Account | 5h | 2018-09-18 08:00 | 2018-09-18 14:00 |  | 2644.88d |  | Intern2 | 5h |
| 352 | 5.3 | Event | 5h | 2018-09-18 08:00 | 2018-09-18 14:00 |  | 2644.88d |  | Intern3 | 5h |
| 353 | 5.4 | Announcements | 5h | 2018-09-18 08:00 | 2018-09-18 14:00 |  | 2644.88d |  | Abby | 5h |
| 354 | 5.5 | Chemical | 5h | 2018-09-19 08:00 | 2018-09-19 14:00 |  | 33.5d | start no earlier than 2018-09-19 08:00 | Intern1; Intern2 | 10h |
| 355 | 5.6 | Contacts – Individuals | 8h | 2018-09-19 10:00 | 2018-09-20 16:00 |  | 2642.62d | start no earlier than 2018-09-19 08:00 | Intern2; Intern3 | 10h |
| 356 | 5.7 | Contacts – Institutions | 5h | 2018-09-19 08:00 | 2018-09-19 14:00 |  | 32.88d | start no earlier than 2018-09-19 08:00 | Full Time | 5h |
| 357 | 5.8 | Discussion | 5h | 2018-09-19 08:00 | 2018-09-19 14:00 |  | 32.88d | start no earlier than 2018-09-19 08:00 | Christian [30%] | 1.5h |
| 358 | 5.9 | Equipment | 5h | 2018-09-18 14:00 | 2018-09-19 10:00 |  | 2644.25d |  | Intern3 | 5h |
| 359 | 5.10 | Facilities PM Schedule | 5h | 2018-09-20 08:00 | 2018-09-20 14:00 |  | 31.88d | start no earlier than 2018-09-20 08:00 | Intern1 | 5h |
| 360 | 5.11 | Facilities (and PM) Work Request | 5h | 2018-09-20 08:00 | 2018-09-20 14:00 |  | 2642.88d | start no earlier than 2018-09-20 08:00 | Intern2 | 5h |
| 361 | 5.12 | Group | 5h | 2018-09-20 08:00 | 2018-09-20 14:00 |  | 31.88d | start no earlier than 2018-09-20 08:00 | Christian [30%] | 1.5h |
| 362 | 5.13 | IT Work Request | 5h | 2018-09-21 08:00 | 2018-09-21 14:00 |  | 2641.88d | start no earlier than 2018-09-21 08:00 | Abby | 5h |
| 363 | 5.14 | Internship | 5h | 2018-09-21 08:00 | 2018-09-21 14:00 |  | 31.5d | start no earlier than 2018-09-21 08:00 | Intern2 | 5h |
| 364 | 5.15 | Job Posting | 5h | 2018-09-21 08:00 | 2018-09-21 14:00 |  | 30.88d | start no earlier than 2018-09-21 08:00 | Full Time | 5h |
| 365 | 5.16 | Oligo Request | 5h | 2018-09-21 08:00 | 2018-09-21 14:00 |  | 31.5d | start no earlier than 2018-09-21 08:00 | Intern3 | 5h |
| 366 | 5.17 | Outbound Invoice | 5h | 2018-09-24 08:00 | 2018-09-24 14:00 |  | 29.88d | start no earlier than 2018-09-24 08:00 | Christian [30%] | 1.5h |
| 367 | 5.18 | P-Card Transaction | 5h | 2018-09-24 08:00 | 2018-09-24 14:00 |  | 30.5d | start no earlier than 2018-09-24 08:00 | Intern2 | 5h |
| 368 | 5.19 | Page/Story/Private Page/Article | 5h | 2018-09-24 08:00 | 2018-09-24 14:00 |  | 2640.88d | start no earlier than 2018-09-24 08:00 | Abby | 5h |
| 369 | 5.20 | Parking Code Request | 5h | 2018-09-24 08:00 | 2018-09-24 14:00 |  | 29.88d | start no earlier than 2018-09-24 08:00 | Intern1 | 5h |
| 370 | 5.21 | Peptide Request | 5h | 2018-09-25 08:00 | 2018-09-25 14:00 |  | 29.5d | start no earlier than 2018-09-25 08:00 | Intern3 | 5h |
| 371 | 5.22 | Primer | 5h | 2018-09-25 08:00 | 2018-09-25 14:00 |  | 29.5d | start no earlier than 2018-09-25 08:00 | Intern1; Intern2 | 10h |
| 372 | 5.23 | Publication | 5h | 2018-09-25 08:00 | 2018-09-25 14:00 |  | 28.88d | start no earlier than 2018-09-25 08:00 | Full Time | 5h |
| 373 | 5.24 | Purchase Request | 5h | 2018-09-25 14:00 | 2018-09-26 10:00 |  | 2639.25d | start no earlier than 2018-09-25 08:00 | Intern3 | 5h |
| 374 | 5.25 | Research Progress Report | 5h | 2018-09-26 08:00 | 2018-09-26 14:00 |  | 27.88d | start no earlier than 2018-09-26 08:00 | Intern1 | 5h |
| 375 | 5.26 | Review | 5h | 2018-09-26 08:00 | 2018-09-26 14:00 |  | 27.88d | start no earlier than 2018-09-26 08:00 | Christian [30%] | 1.5h |
| 376 | 5.27 | Room | 5h | 2018-09-26 08:00 | 2018-09-26 14:00 |  | 2638.88d | start no earlier than 2018-09-26 08:00 | Abby | 5h |
| 377 | 5.28 | Room Reservation/Event | 5h | 2018-09-26 08:00 | 2018-09-26 14:00 |  | 2638.88d | start no earlier than 2018-09-26 08:00 | Intern2 | 5h |
| 378 | 5.29 | Seed Grant Proposal | 5h | 2018-09-27 08:00 | 2018-09-27 14:00 |  | 2637.88d | start no earlier than 2018-09-27 08:00 | Intern2 | 5h |
| 379 | 5.30 | Service Contract | 5h | 2018-09-27 08:00 | 2018-09-27 14:00 |  | 2637.88d | start no earlier than 2018-09-27 08:00 | Intern3 | 5h |
| 380 | 5.31 | Shipping Request | 5h | 2018-09-27 08:00 | 2018-09-27 14:00 |  | 26.88d | start no earlier than 2018-09-27 08:00 | Intern1 | 5h |
| 381 | 5.32 | Student Evaluation | 5h | 2018-09-27 08:00 | 2018-09-27 14:00 |  | 26.88d | start no earlier than 2018-09-27 08:00 | Full Time | 5h |
| 382 | 5.33 | Travel Expense Worksheet | 5h | 2018-09-28 08:00 | 2018-09-28 14:00 |  | 2636.88d | start no earlier than 2018-09-28 08:00 | Intern2 | 5h |
| 383 | 5.34 | Travel Request | 5h | 2018-09-28 08:00 | 2018-09-28 14:00 |  | 2636.88d | start no earlier than 2018-09-28 08:00 | Abby | 5h |
| 384 | 5.35 | Webform | 5h | 2018-09-28 08:00 | 2018-09-28 14:00 |  | 25.88d | start no earlier than 2018-09-28 08:00 | Christian [30%] | 1.5h |

Notes:
- 349: Refer to the Task List Document in the S Drive for the specific permissions. They are organized by content type/model. Each of these should get shorter with time because you're essentially doing similar/repeated things but I gave each 5 hours in case.

| ID | WBS | Task | Duration | Start | Finish | Total slack | Free slack | Constraint | Resources | Work |
| --- | --- | --- | --- | --- | --- | --- | --- | --- | --- | --- |
| 385 | 6 | **Rules** | 11.62d | 2018-10-01 08:00 | 2018-10-16 14:00 |  |  |  |  | 188.2h |
| 386 | 6.1 | Shipping – Send to PI for Approval | 5h | 2018-10-01 08:00 | 2018-10-01 14:00 | 2635.88d |  |  | Intern2 | 5h |
| 387 | 6.2 | Create or link user for customers | 4h | 2018-10-01 08:00 | 2018-10-01 12:00 | 2636d |  |  | Abby | 4h |
| 388 | 6.3 | Outvoicing – New Quote | 4h | 2018-10-01 08:00 | 2018-10-01 12:00 | 25d |  |  | Christian [30%] | 1.2h |
| 389 | 6.4 | Remove files from NMR discussions | 4h | 2018-10-01 08:00 | 2018-10-01 12:00 | 25d |  |  | Intern1 | 4h |
| 390 | 6.5 | Facilities – update status | 4h | 2018-10-02 08:00 | 2018-10-02 12:00 | 2635d |  | start no earlier than 2018-10-02 08:00 | Intern3 | 4h |
| 391 | 6.6 | Facilities – new ticket | 4h | 2018-10-02 08:00 | 2018-10-02 12:00 | 24d |  | start no earlier than 2018-10-02 08:00 | Full Time | 4h |
| 392 | 6.7 | Facilities – update PM | 4h | 2018-10-02 08:00 | 2018-10-02 12:00 | 2635d |  | start no earlier than 2018-10-02 08:00 | Intern2 | 4h |
| 393 | 6.8 | Create home page for group | 4h | 2018-10-02 08:00 | 2018-10-02 12:00 | 2635d |  | start no earlier than 2018-10-02 08:00 | Abby | 4h |
| 394 | 6.9 | IT update status | 4h | 2018-10-03 08:00 | 2018-10-03 12:00 | 2634d |  | start no earlier than 2018-10-03 08:00 | Intern3 | 4h |
| 395 | 6.10 | IT - Ticket Created | 4h | 2018-10-03 08:00 | 2018-10-03 12:00 | 23d |  | start no earlier than 2018-10-03 08:00 | Full Time | 4h |
| 396 | 6.11 | IT Ticket for new personnel | 4h | 2018-10-03 08:00 | 2018-10-03 12:00 | 23d |  | start no earlier than 2018-10-03 08:00 | Intern1 | 4h |
| 397 | 6.12 | Internship Notification | 4h | 2018-10-10 08:00 | 2018-10-10 12:00 | 2629d |  | start no earlier than 2018-10-10 08:00 | Intern2 | 4h |
| 398 | 6.13 | Oligo Created | 4h | 2018-10-04 08:00 | 2018-10-04 12:00 | 22d |  | start no earlier than 2018-10-04 08:00 | Intern1 | 4h |
| 399 | 6.14 | Parking Code Request submitted | 4h | 2018-10-04 08:00 | 2018-10-04 12:00 | 2633d |  | start no earlier than 2018-10-04 08:00 | Intern3 | 4h |
| 400 | 6.15 | Peptide request created | 4h | 2018-10-04 08:00 | 2018-10-04 12:00 | 2633d |  | start no earlier than 2018-10-04 08:00 | Intern2 | 4h |
| 401 | 6.16 | Purchase Request – Create line items | 4h | 2018-10-05 08:00 | 2018-10-05 12:00 | 2632d |  | start no earlier than 2018-10-05 08:00 | Intern3 | 4h |
| 402 | 6.17 | NIST Purchase Forwarding | 4h | 2018-10-05 08:00 | 2018-10-05 12:00 | 21d |  | start no earlier than 2018-10-05 08:00 | Full Time | 4h |
| 403 | 6.18 | Review Submitted for Seed Grant | 4h | 2018-10-05 08:00 | 2018-10-05 12:00 | 2632d |  | start no earlier than 2018-10-05 08:00 | Intern2 | 4h |
| 404 | 6.19 | Display conflict message for conflicting events | 4h | 2018-10-05 08:00 | 2018-10-05 12:00 | 2632d |  | start no earlier than 2018-10-05 08:00 | Abby | 4h |
| 405 | 6.20 | Event has been confirmed by event coordinator | 4h | 2018-10-08 08:00 | 2018-10-08 12:00 | 2631d |  | start no earlier than 2018-10-08 08:00 | Intern2 | 4h |
| 406 | 6.21 | Event reservation not confirmed | 4h | 2018-10-08 08:00 | 2018-10-08 12:00 | 20d |  | start no earlier than 2018-10-08 08:00 | Full Time | 4h |
| 407 | 6.22 | Empty other location in event if unchecked | 4h | 2018-10-08 08:00 | 2018-10-08 12:00 | 2631d |  | start no earlier than 2018-10-08 08:00 | Intern3 | 4h |
| 408 | 6.23 | Room reservation/Event created | 4h | 2018-10-08 08:00 | 2018-10-08 12:00 | 2631d |  | start no earlier than 2018-10-08 08:00 | Abby | 4h |
| 409 | 6.24 | IT ticket for post processing Youtube live events – new room reservation | 8h | 2018-10-08 08:00 | 2018-10-08 17:00 | 2630.5d | 2631d | start no earlier than 2018-10-08 08:00 | Intern1; Intern2; Intern3 | 12h |
| 410 | 6.25 | IT ticket for post processing Youtube live events – updated room reservation | 4h | 2018-10-09 08:00 | 2018-10-09 12:00 | 2630d |  | start no earlier than 2018-10-09 08:00 | Intern1; Intern2; Intern3 | 12h |
| 411 | 6.26 | Seed Grant Proposal – Permissions | 4h | 2018-10-09 08:00 | 2018-10-09 12:00 | 19d |  | start no earlier than 2018-10-09 08:00 | Full Time | 4h |
| 412 | 6.27 | Seed Grant Proposal – Reviewers selected | 4h | 2018-10-09 08:00 | 2018-10-09 12:00 | 2630d |  | start no earlier than 2018-10-09 08:00 | Abby | 4h |
| 413 | 6.28 | Seed Grant Proposal - Comments | 4h | 2018-10-09 13:00 | 2018-10-09 17:00 | 2629.5d | 2630d | start no earlier than 2018-10-09 08:00 | Full Time | 4h |
| 414 | 6.29 | Shipping – IBBR funds | 4h | 2018-10-10 08:00 | 2018-10-10 12:00 | 18d |  | start no earlier than 2018-10-10 08:00 | Intern1 | 4h |
| 415 | 6.30 | Tracking number entered – shipped | 4h | 2018-10-10 08:00 | 2018-10-10 12:00 | 2629d |  | start no earlier than 2018-10-10 08:00 | Intern3 | 4h |
| 416 | 6.31 | Shipping – User Has Submitted Requested Changes | 4h | 2018-10-10 13:00 | 2018-10-10 17:00 | 2628.5d | 2629d | start no earlier than 2018-10-10 08:00 | Intern2 | 4h |
| 417 | 6.32 | Shipping Request Fedex Account Number Management | 4h | 2018-10-11 08:00 | 2018-10-11 12:00 | 2628d |  | start no earlier than 2018-10-11 08:00 | Intern2 | 4h |
| 418 | 6.33 | Travel – New form submitted | 4h | 2018-10-11 08:00 | 2018-10-11 12:00 | 17d |  | start no earlier than 2018-10-11 08:00 | Intern1 | 4h |
| 419 | 6.34 | Schedule TES after Travel | 4h | 2018-10-11 08:00 | 2018-10-11 12:00 | 2628d |  | start no earlier than 2018-10-11 08:00 | Intern3 | 4h |
| 420 | 6.35 | Parking code request – approval by e-mail | 4h | 2018-10-12 08:00 | 2018-10-12 12:00 | 16d |  | start no earlier than 2018-10-12 08:00 | Intern1 | 4h |
| 421 | 6.36 | Travel request – approval by e-mail | 4h | 2018-10-12 08:00 | 2018-10-12 12:00 | 2627d |  | start no earlier than 2018-10-12 08:00 | Intern3 | 4h |
| 422 | 6.37 | Parking Code Request – Presave | 4h | 2018-10-12 08:00 | 2018-10-12 12:00 | 2627d |  | start no earlier than 2018-10-12 08:00 | Intern2 | 4h |
| 423 | 6.38 | OG creation upon adding new taxonomy term | 4h | 2018-10-15 08:00 | 2018-10-15 12:00 | 2626d |  | start no earlier than 2018-10-15 08:00 | Intern2 | 4h |
| 424 | 6.39 | Purchase Request – approval by email | 4h | 2018-10-15 08:00 | 2018-10-15 12:00 | 15d |  | start no earlier than 2018-10-15 08:00 | Intern1 | 4h |
| 425 | 6.40 | Redirect IBBR customers to their dashboard | 4h | 2018-10-15 08:00 | 2018-10-15 12:00 | 2626d |  | start no earlier than 2018-10-15 08:00 | Abby | 4h |
| 426 | 6.41 | Shipping Request – approval by email | 5h | 2018-10-16 08:00 | 2018-10-16 14:00 | 2624.88d |  | start no earlier than 2018-10-16 08:00 | Intern2; Intern3 | 10h |
| 427 | 6.42 | Shipping – IBBR Funds | 4h | 2018-10-16 08:00 | 2018-10-16 12:00 | 14d |  | start no earlier than 2018-10-16 08:00 | Intern1 | 4h |

| ID | WBS | Task | Duration | Start | Finish | Total slack | Free slack | Constraint | Resources | Work |
| --- | --- | --- | --- | --- | --- | --- | --- | --- | --- | --- |
| 428 | 7 | **Modules** | 13d | 2018-10-17 08:00 | 2018-11-02 17:00 |  |  |  |  | 228h |
| 429 | 7.1 | IBBR Duplicates | 1d | 2018-10-17 08:00 | 2018-10-17 17:00 | 2623.5d |  |  | Full Time | 8h |
| 430 | 7.2 | Event Room Reservation | 2d | 2018-10-17 08:00 | 2018-10-18 17:00 | 2622.5d |  |  | Intern2 | 16h |
| 431 | 7.3 | IBBR Announcement | 1d | 2018-10-17 08:00 | 2018-10-17 17:00 | 2623.5d |  |  | Abby | 8h |
| 432 | 7.4 | IBBR Inventory Scan | 3d | 2018-10-17 08:00 | 2018-10-19 17:00 | 2621.5d |  |  | Intern1 | 24h |
| 433 | 7.5 | IBBR Outbound Invoicing | 2d | 2018-10-18 08:00 | 2018-10-19 17:00 | 11.12d |  | start no earlier than 2018-10-18 08:00 | Christian [30%] | 4.8h |
| 434 | 7.6 | IBBR P-card helper | 1d | 2018-10-18 08:00 | 2018-10-18 17:00 | 12.12d |  | start no earlier than 2018-10-18 08:00 | Full Time | 8h |
| 435 | 7.7 | IBBR | 1d | 2018-10-19 08:00 | 2018-10-19 17:00 | 2621.5d |  | start no earlier than 2018-10-19 08:00 | Abby | 8h |
| 436 | 7.8 | IBBR Auth | 3d | 2018-10-22 08:00 | 2018-10-24 17:00 | 8.12d |  | start no earlier than 2018-10-22 08:00 | Christian [30%] | 7.2h |
| 437 | 7.9 | IBBR NIST | 1d | 2018-10-22 08:00 | 2018-10-22 17:00 | 2620.5d |  | start no earlier than 2018-10-22 08:00 | Intern2 | 8h |
| 438 | 7.10 | IBBR Payment | 2d | 2018-10-22 08:00 | 2018-10-23 17:00 | 9.12d |  | start no earlier than 2018-10-22 08:00 | Full Time | 16h |
| 439 | 7.11 | IBBR Purchasing | 3d | 2018-10-23 08:00 | 2018-10-25 17:00 | 2617.5d |  | start no earlier than 2018-10-23 08:00 | Intern2; Intern1 | 48h |
| 440 | 7.12 | IBBR Sync | 3.25d | 2018-10-30 08:00 | 2018-11-02 17:00 | 2611.5d | 2612.5d | start no earlier than 2018-10-30 08:00 | Intern3; Intern2; Intern1 | 72h |
| 441 | 8 | **Menus** | 5.5d | 2018-10-31 08:00 | 2018-11-07 12:00 |  |  |  |  | 53h |
| 442 | 8.1 | Accounting/Purchasing | 2h | 2018-10-31 08:00 | 2018-10-31 10:00 | 3.88d |  |  | Full Time | 2h |
| 443 | 8.2 | Create | 2h | 2018-10-31 08:00 | 2018-10-31 10:00 | 3.88d |  |  | Intern1 | 2h |
| 444 | 8.3 | Development | 2h | 2018-10-31 08:00 | 2018-10-31 10:00 | 2614.25d |  |  | Abby | 2h |
| 445 | 8.4 | Events/Marketing | 2h | 2018-10-31 08:00 | 2018-10-31 10:00 | 2614.25d |  |  | Intern2 | 2h |
| 446 | 8.5 | External Contacts | 2h | 2018-10-31 08:00 | 2018-10-31 10:00 | 2614.25d |  |  | Intern3 | 2h |
| 447 | 8.6 | Facilities | 2h | 2018-11-01 08:00 | 2018-11-01 10:00 | 2.88d |  | start no earlier than 2018-11-01 08:00 | Full Time | 2h |
| 448 | 8.7 | Groups | 2h | 2018-11-02 13:00 | 2018-11-02 15:00 | 1.38d |  | start no earlier than 2018-11-02 13:00 | Intern1 | 2h |
| 449 | 8.8 | Human Resources | 2h | 2018-11-02 13:00 | 2018-11-02 15:00 | 2611.75d |  | start no earlier than 2018-11-02 13:00 | Intern2 | 2h |
| 450 | 8.9 | Intranet menu | 2h | 2018-11-02 13:00 | 2018-11-02 15:00 | 2611.75d |  | start no earlier than 2018-11-02 13:00 | Intern3 | 2h |
| 451 | 8.10 | IT Support | 2h | 2018-11-05 08:00 | 2018-11-05 10:00 | 0.88d |  | start no earlier than 2018-11-05 08:00 | Full Time | 2h |
| 452 | 8.11 | ITF Management | 2h | 2018-11-05 08:00 | 2018-11-05 10:00 | 0.88d |  | start no earlier than 2018-11-05 08:00 | Intern1 | 2h |
| 453 | 8.12 | Main menu | 5h | 2018-11-05 08:00 | 2018-11-05 14:00 | 2610.88d |  | start no earlier than 2018-11-05 08:00 | Abby | 5h |
| 454 | 8.13 | Management | 5h | 2018-11-05 13:00 | 2018-11-06 09:00 | 2610.38d |  | start no earlier than 2018-11-05 13:00 | Intern1; Intern2 | 10h |
| 455 | 8.14 | Navigation | 5h | 2018-11-05 08:00 | 2018-11-05 14:00 | 2610.88d |  | start no earlier than 2018-11-05 08:00 | Intern3 | 5h |
| 456 | 8.15 | Oligo/Peptide | 2h | 2018-11-06 10:00 | 2018-11-06 12:00 | 2610d |  | start no earlier than 2018-11-06 10:00 | Intern1 | 2h |
| 457 | 8.16 | Secondary menu | 2h | 2018-11-06 08:00 | 2018-11-06 10:00 | 2610.25d |  | start no earlier than 2018-11-06 08:00 | Intern3 | 2h |
| 458 | 8.17 | Sponsored Research | 2h | 2018-11-06 13:00 | 2018-11-06 15:00 | 2609.75d |  | start no earlier than 2018-11-06 13:00 | Intern1 | 2h |
| 459 | 8.18 | Submit Work Requests | 2h | 2018-11-06 13:00 | 2018-11-06 15:00 | 2609.75d |  | start no earlier than 2018-11-06 13:00 | Intern2 | 2h |
| 460 | 8.19 | Tools | 3h | 2018-11-07 08:00 | 2018-11-07 11:00 | 3.12d |  | finish no earlier than 2018-11-07 11:00 | Full Time | 3h |
| 461 | 8.20 | User Menu | 4h | 2018-11-07 08:00 | 2018-11-07 12:00 | 3d |  | start no earlier than 2018-11-07 08:00 | Abby |  |

| ID | WBS | Task | Duration | Start | Finish | Total slack | Free slack | Constraint | Resources | Work |
| --- | --- | --- | --- | --- | --- | --- | --- | --- | --- | --- |
| 462 | 9 | **Feeds Importers** | 2.5d | 2018-11-08 08:00 | 2018-11-12 12:00 |  |  |  |  | 52h |
| 463 | 9.1 | Chemical Inventory Importer | 4h | 2018-11-08 08:00 | 2018-11-08 12:00 | 2608d |  |  | Intern3 | 4h |
| 464 | 9.2 | Contacts Importer | 4h | 2018-11-08 08:00 | 2018-11-08 12:00 | 2608d |  |  | Intern2 | 4h |
| 465 | 9.3 | Equipment Importer | 4h | 2018-11-08 08:00 | 2018-11-08 12:00 | 2608d |  |  | Intern1 | 4h |
| 466 | 9.4 | NIST Equipment Importer | 4h | 2018-11-08 13:00 | 2018-11-08 17:00 | 2607.5d |  | start no earlier than 2018-11-08 13:00 | Intern1 | 4h |
| 467 | 9.5 | P-Card Transaction Importer | 4h | 2018-11-09 08:00 | 2018-11-09 12:00 | 2607d |  | start no earlier than 2018-11-09 08:00 | Full Time | 4h |
| 468 | 9.6 | Parking Code Importer | 4h | 2018-11-09 08:00 | 2018-11-09 12:00 | 2607d |  | start no earlier than 2018-11-09 08:00 | Intern3 | 4h |
| 469 | 9.7 | PM Schedule Importer | 4h | 2018-11-02 08:00 | 2018-11-02 12:00 | 2612d |  | start no earlier than 2018-11-02 08:00 | Full Time | 4h |
| 470 | 9.8 | Printer Use Logs | 4h | 2018-11-02 08:00 | 2018-11-02 12:00 | 6d |  | start no earlier than 2018-11-02 08:00 | Intern2 | 4h |
| 471 | 9.9 | Purchase Request Feed Importer | 4h | 2018-11-05 14:00 | 2018-11-06 11:00 | 2610.12d | 2611d | start no earlier than 2018-11-05 08:00 | Intern3 | 4h |
| 472 | 9.10 | Rooms Data Importer | 4h | 2018-11-05 14:00 | 2018-11-06 09:00 | 4.38d |  | start no earlier than 2018-11-05 08:00 | Abby | 4h |
| 473 | 9.11 | Sensitive Equipment | 4h | 2018-11-05 10:00 | 2018-11-06 16:00 | 2609.62d | 2611d | start no earlier than 2018-11-05 08:00 | Intern1 | 4h |
| 474 | 9.12 | Service Contract Importer | 4h | 2018-11-05 08:00 | 2018-11-05 12:00 | 2611d |  | start no earlier than 2018-11-05 08:00 | Intern2 | 4h |
| 475 | 9.13 | UMCP Data Warehouse Import | 4h | 2018-11-06 11:00 | 2018-11-06 16:00 | 3.62d |  | start no earlier than 2018-11-05 08:00 | Intern3 | 4h |
